# elaboration_project_plan

Schedule from MS Project, 2007-03-01 to 2007-10-31, A marks actual dates.
Duke University

## Calendars

- Standard: Mon-Fri 08:00-12:00, 13:00-17:00; Sat-Sun off.

## Resources

| Resource |
| --- |
| Patrick |
| Ram |
| Elaborators |
| PriyatamElaborators |
| Development team |
| Pri |
| Priyatam |
| Ramakrishna |
| Kruttik |
| Manav |
| Developers |
| Development teatm |
| BAH |
| Adopters |
| Pryatam |
| Kula |

## Schedule

| ID | WBS | Task | Type | Duration | Start | Finish | Predecessors | Complete | Remaining | Total slack | Free slack | Constraint | Resources | Work | Actual work |
| --- | --- | --- | --- | --- | --- | --- | --- | --- | --- | --- | --- | --- | --- | --- | --- |
| 1 | 1 | **Iteration 1 (eligibility, study personnel, registration management, multi-site study)** |  | 33d | 2007-03-01 A | 2007-04-16 |  | 3% | 32.01d | 142d |  |  |  | 21056h | 696.47h |
| 2 | 1.1 | Iteration start | milestone | 0d | 2007-03-01 | 2007-03-01 |  |  |  | 0d |  | start no earlier than 2007-03-01 |  |  |  |
| 3 | 1.2 | **Project Management** |  | 30d | 2007-03-01 A | 2007-04-11 | 2 | 14% | 25.71d | 145d |  |  | Patrick; Adopters; BAH | 2640h | 382.86h |
| 4 | 1.2.1 | **Draft project plan (task 1.1)** |  | 30d | 2007-03-01 A | 2007-04-11 |  | 17% | 25d | 145d |  |  | Patrick; Adopters; BAH | 960h | 160h |
| 5 | 1.2.1.1 | Developer draft |  | 5d | 2007-03-01 A | 2007-03-07 A |  | 100% |  |  |  |  | Patrick | 40h | 40h |
| 6 | 1.2.1.2 | BAH review |  | 5d | 2007-03-08 | 2007-03-14 | 5 |  |  | 145d | 0d |  | BAH | 40h |  |
| 7 | 1.2.1.3 | Developer update |  | 5d | 2007-03-15 | 2007-03-21 | 6 |  |  | 145d | 0d |  | Patrick | 40h |  |
| 8 | 1.2.1.4 | Adopter review |  | 3d | 2007-03-22 | 2007-03-26 | 7 |  |  | 145d | 0d |  | Adopters | 24h |  |
| 9 | 1.2.1.5 | Developer update |  | 2d | 2007-03-27 | 2007-03-28 | 8 |  |  | 145d | 0d |  | Patrick | 16h |  |
| 10 | 1.2.1.6 | Deliver project plan to BAH (task 1.1) | milestone | 0d | 2007-03-28 | 2007-03-28 | 9 |  |  | 145d | 0d |  | Patrick |  |  |
| 11 | 1.2.1.7 | BAH review project plan (task 1.1) |  | 10d | 2007-03-29 | 2007-04-11 | 10 |  |  | 145d |  |  | BAH | 80h |  |
| 12 | 1.2.2 | **Update risk matrix (task 1.3.1)** |  | 20d | 2007-03-01 A | 2007-03-28 |  | 25% | 15d | 155d |  |  | Patrick; BAH | 480h | 120h |
| 13 | 1.2.2.1 | Update risk matrix for week 1 |  | 5d | 2007-03-01 A | 2007-03-07 A |  | 100% |  |  |  |  | Patrick | 40h | 40h |
| 14 | 1.2.2.2 | Update risk matrix for week 2 |  | 5d | 2007-03-08 | 2007-03-14 | 13 |  |  | 145d | 0d |  | Patrick | 40h |  |
| 15 | 1.2.2.3 | Deliver risk matrix to BAH (task 1.3.1) | milestone | 0d | 2007-03-14 | 2007-03-14 | 14 |  |  | 145d | 0d |  | Patrick |  |  |
| 16 | 1.2.2.4 | BAH review risk matrix (task 1.3.1) |  | 10d | 2007-03-15 | 2007-03-28 | 15 |  |  | 155d |  |  | BAH | 80h |  |
| 17 | 1.2.3 | **Monthly report (task 1.3.1)** |  | 20d | 2007-03-15 | 2007-04-11 | 15 |  |  | 145d |  |  | Patrick; BAH | 480h |  |
| 18 | 1.2.3.1 | Update risk matrix for week 3 |  | 5d | 2007-03-15 | 2007-03-21 |  |  |  | 145d | 0d |  | Patrick | 40h |  |
| 19 | 1.2.3.2 | Update risk matrix for week 4 |  | 5d | 2007-03-22 | 2007-03-28 | 18 |  |  | 145d | 0d |  | Patrick | 40h |  |
| 20 | 1.2.3.3 | Deliver monthly report and risk matrix to BAH (task 1.3.1) | milestone | 0d | 2007-03-28 | 2007-03-28 | 19 |  |  | 145d | 0d |  | Patrick |  |  |
| 21 | 1.2.3.4 | BAH review monthly report and risk matrix (task 1.3.1) |  | 10d | 2007-03-29 | 2007-04-11 | 20 |  |  | 145d |  |  | BAH | 80h |  |
| 22 | 1.3 | **Requirements and use cases** |  | 32d | 2007-03-01 A | 2007-04-13 | 2 | 8% | 29.38d | 143d |  |  | Developers; Adopters; BAH | 4048h | 313.62h |
| 23 | 1.3.1 | **Create level 1 use cases and requirements** |  | 4d | 2007-03-01 A | 2007-03-06 |  | 83% | 0.67d | 142d | 0d |  | Developers | 288h | 250.67h |
| 24 | 1.3.1.1 | **Level 1 use cases for eligibility** |  | 2d | 2007-03-01 A | 2007-03-02 A |  | 100% |  |  |  |  | Kruttik; Priyatam | 64h | 64h |
| 25 | 1.3.1.1.1 | Use case document (task 3.1.1) |  | 1d | 2007-03-01 A | 2007-03-01 A |  | 100% |  |  |  |  | Kruttik; Priyatam | 16h | 16h |
| 26 | 1.3.1.1.2 | Requirements document (3.2.1) |  | 1d | 2007-03-02 A | 2007-03-02 A | 25 | 100% |  |  |  |  | Kruttik; Priyatam | 16h | 16h |

| ID | WBS | Task | Duration | Start | Finish | Predecessors | Complete | Total slack | Free slack | Resources | Work | Actual work |
| --- | --- | --- | --- | --- | --- | --- | --- | --- | --- | --- | --- | --- |
| 27 | 1.3.1.2 | **Level 1 use cases for study personnel** | 2d | 2007-03-01 A | 2007-03-02 A |  | 100% |  |  | Priyatam; Kula | 64h | 64h |
| 28 | 1.3.1.2.1 | Use case document (task 3.1.1) | 1d | 2007-03-01 A | 2007-03-01 A |  | 100% |  |  | Priyatam; Kula | 16h | 16h |
| 29 | 1.3.1.2.2 | Requirements document (3.2.1) | 1d | 2007-03-02 A | 2007-03-02 A | 28 | 100% |  |  | Priyatam; Kula | 16h | 16h |
| 30 | 1.3.1.3 | **Level 1 use cases for registration management** | 2d | 2007-03-01 A | 2007-03-02 A |  | 100% |  |  | Ramakrishna | 32h | 32h |
| 31 | 1.3.1.3.1 | Use case document (task 3.1.1) | 1d | 2007-03-01 A | 2007-03-01 A |  | 100% |  |  | Ramakrishna | 8h | 8h |
| 32 | 1.3.1.3.2 | Requirements document (3.2.1) | 1d | 2007-03-02 A | 2007-03-02 A | 31 | 100% |  |  | Ramakrishna | 8h | 8h |
| 33 | 1.3.1.4 | **Level 1 use cases for multi-site study** | 4d | 2007-03-01 A | 2007-03-06 A |  | 100% |  |  | Manav | 64h | 64h |
| 34 | 1.3.1.4.1 | Use case document (task 3.1.1) | 2d | 2007-03-01 A | 2007-03-02 A |  | 100% |  |  | Manav | 16h | 16h |
| 35 | 1.3.1.4.2 | Requirements document (3.2.1) | 2d | 2007-03-05 A | 2007-03-06 A | 34 | 100% |  |  | Manav | 16h | 16h |
| 36 | 1.3.1.5 | **Level 1 use cases for C3D integration** | 2d | 2007-03-01 | 2007-03-02 |  |  | 144d |  | Manav | 32h |  |
| 37 | 1.3.1.5.1 | Use case document (task 3.1.1) | 1d | 2007-03-01 | 2007-03-01 |  |  | 121d | 0d | Manav | 8h |  |
| 38 | 1.3.1.5.2 | Requirements document (3.2.1) | 1d | 2007-03-02 | 2007-03-02 | 37 |  | 121d |  | Manav | 8h |  |
| 39 | 1.3.2 | **Update use case document (task 3.1.1, task 5.2.1)** | 9d | 2007-03-07 | 2007-03-19 | 23 |  | 143d | 0d | Developers; Adopters | 1416h |  |
| 40 | 1.3.2.1 | **Update eligibility use cases** | 9d | 2007-03-07 | 2007-03-19 |  |  | 143d |  | Kruttik; Adopters; Priyatam | 312h |  |
| 41 | 1.3.2.1.1 | Developer update | 2d | 2007-03-07 | 2007-03-08 |  |  | 120d | 0d | Kruttik; Priyatam | 32h |  |
| 42 | 1.3.2.1.2 | Adopter review | 5d | 2007-03-09 | 2007-03-15 | 41 |  | 120d | 0d | Adopters | 40h |  |
| 43 | 1.3.2.1.3 | Developer update | 1d | 2007-03-16 | 2007-03-16 | 42 |  | 120d | 0d | Kruttik; Priyatam | 16h |  |
| 44 | 1.3.2.1.4 | Adopter sign-off | 1d | 2007-03-19 | 2007-03-19 | 43 |  | 120d |  | Adopters | 8h |  |
| 45 | 1.3.2.2 | **Update study personnel use cases** | 9d | 2007-03-07 | 2007-03-19 |  |  | 143d |  | Priyatam; Adopters; Kula | 312h |  |
| 46 | 1.3.2.2.1 | Developer update | 2d | 2007-03-07 | 2007-03-08 |  |  | 120d | 0d | Priyatam; Kula | 32h |  |
| 47 | 1.3.2.2.2 | Adopter review | 5d | 2007-03-09 | 2007-03-15 | 46 |  | 120d | 0d | Adopters | 40h |  |
| 48 | 1.3.2.2.3 | Developer update | 1d | 2007-03-16 | 2007-03-16 | 47 |  | 120d | 0d | Priyatam; Kula | 16h |  |
| 49 | 1.3.2.2.4 | Adopter sign-off | 1d | 2007-03-19 | 2007-03-19 | 48 |  | 120d |  | Adopters | 8h |  |
| 50 | 1.3.2.3 | **Update registration management use cases** | 9d | 2007-03-07 | 2007-03-19 |  |  | 143d |  | Ramakrishna; Adopters | 216h |  |
| 51 | 1.3.2.3.1 | Developer update | 2d | 2007-03-07 | 2007-03-08 |  |  | 120d | 0d | Ramakrishna | 16h |  |
| 52 | 1.3.2.3.2 | Adopter review | 5d | 2007-03-09 | 2007-03-15 | 51 |  | 120d | 0d | Adopters | 40h |  |
| 53 | 1.3.2.3.3 | Developer update | 1d | 2007-03-16 | 2007-03-16 | 52 |  | 120d | 0d | Ramakrishna | 8h |  |
| 54 | 1.3.2.3.4 | Adopter sign-off | 1d | 2007-03-19 | 2007-03-19 | 53 |  | 120d |  | Adopters | 8h |  |

| ID | WBS | Task | Duration | Start | Finish | Predecessors | Total slack | Free slack | Resources | Work |
| --- | --- | --- | --- | --- | --- | --- | --- | --- | --- | --- |
| 55 | 1.3.2.4 | **Update multi-site trial use cases** | 9d | 2007-03-07 | 2007-03-19 |  | 143d |  | Manav; Adopters | 216h |
| 56 | 1.3.2.4.1 | Developer update | 2d | 2007-03-07 | 2007-03-08 |  | 120d | 0d | Manav | 16h |
| 57 | 1.3.2.4.2 | Adopter review | 5d | 2007-03-09 | 2007-03-15 | 56 | 120d | 0d | Adopters | 40h |
| 58 | 1.3.2.4.3 | Developer update | 1d | 2007-03-16 | 2007-03-16 | 57 | 120d | 0d | Manav | 8h |
| 59 | 1.3.2.4.4 | Adopter sign-off | 1d | 2007-03-19 | 2007-03-19 | 58 | 120d |  | Adopters | 8h |
| 60 | 1.3.2.5 | **Update C3D integration use cases** | 9d | 2007-03-07 | 2007-03-19 |  | 143d |  | Manav; Adopters | 216h |
| 61 | 1.3.2.5.1 | Developer update | 2d | 2007-03-07 | 2007-03-08 |  | 120d | 0d | Manav | 16h |
| 62 | 1.3.2.5.2 | Adopter review | 5d | 2007-03-09 | 2007-03-15 | 61 | 120d | 0d | Adopters | 40h |
| 63 | 1.3.2.5.3 | Developer update | 1d | 2007-03-16 | 2007-03-16 | 62 | 120d | 0d | Manav | 8h |
| 64 | 1.3.2.5.4 | Adopter sign-off | 1d | 2007-03-19 | 2007-03-19 | 63 | 120d |  | Adopters | 8h |
| 65 | 1.3.3 | **Update requirements document (task 3.2.1, task 5.3.1)** | 9d | 2007-03-20 | 2007-03-30 | 39 | 143d | 0d | Developers; Adopters | 1416h |
| 66 | 1.3.3.1 | **Update eligibility requirements** | 9d | 2007-03-20 | 2007-03-30 |  | 143d |  | Kruttik; Priyatam; Adopters | 312h |
| 67 | 1.3.3.1.1 | Developer update | 2d | 2007-03-20 | 2007-03-21 |  | 120d | 0d | Kruttik; Priyatam | 32h |
| 68 | 1.3.3.1.2 | Adopter review | 5d | 2007-03-22 | 2007-03-28 | 67 | 120d | 0d | Adopters | 40h |
| 69 | 1.3.3.1.3 | Developer update | 1d | 2007-03-29 | 2007-03-29 | 68 | 120d | 0d | Kruttik; Priyatam | 16h |
| 70 | 1.3.3.1.4 | Adopter sign-off | 1d | 2007-03-30 | 2007-03-30 | 69 | 120d |  | Adopters | 8h |
| 71 | 1.3.3.2 | **Update study personel requirements** | 9d | 2007-03-20 | 2007-03-30 |  | 143d |  | Priyatam; Adopters; Kula | 312h |
| 72 | 1.3.3.2.1 | Developer update | 2d | 2007-03-20 | 2007-03-21 |  | 120d | 0d | Priyatam; Kula | 32h |
| 73 | 1.3.3.2.2 | Adopter review | 5d | 2007-03-22 | 2007-03-28 | 72 | 120d | 0d | Adopters | 40h |
| 74 | 1.3.3.2.3 | Developer update | 1d | 2007-03-29 | 2007-03-29 | 73 | 120d | 0d | Priyatam; Kula | 16h |
| 75 | 1.3.3.2.4 | Adopter sign-off | 1d | 2007-03-30 | 2007-03-30 | 74 | 120d |  | Adopters | 8h |
| 76 | 1.3.3.3 | **Update registration management requirements** | 9d | 2007-03-20 | 2007-03-30 |  | 143d |  | Ramakrishna; Adopters | 216h |
| 77 | 1.3.3.3.1 | Developer update | 2d | 2007-03-20 | 2007-03-21 |  | 120d | 0d | Ramakrishna | 16h |
| 78 | 1.3.3.3.2 | Adopter review | 5d | 2007-03-22 | 2007-03-28 | 77 | 120d | 0d | Adopters | 40h |
| 79 | 1.3.3.3.3 | Developer update | 1d | 2007-03-29 | 2007-03-29 | 78 | 120d | 0d | Ramakrishna | 8h |
| 80 | 1.3.3.3.4 | Adopter sign-off | 1d | 2007-03-30 | 2007-03-30 | 79 | 120d |  | Adopters | 8h |

| ID | WBS | Task | Type | Duration | Start | Finish | Predecessors | Total slack | Free slack | Resources | Work |
| --- | --- | --- | --- | --- | --- | --- | --- | --- | --- | --- | --- |
| 81 | 1.3.3.4 | **Update multi-site trial requirements** |  | 9d | 2007-03-20 | 2007-03-30 |  | 143d |  | Manav; Adopters | 216h |
| 82 | 1.3.3.4.1 | Developer update |  | 2d | 2007-03-20 | 2007-03-21 |  | 120d | 0d | Manav | 16h |
| 83 | 1.3.3.4.2 | Adopter review |  | 5d | 2007-03-22 | 2007-03-28 | 82 | 120d | 0d | Adopters | 40h |
| 84 | 1.3.3.4.3 | Developer update |  | 1d | 2007-03-29 | 2007-03-29 | 83 | 120d | 0d | Manav | 8h |
| 85 | 1.3.3.4.4 | Adopter sign-off |  | 1d | 2007-03-30 | 2007-03-30 | 84 | 120d |  | Adopters | 8h |
| 86 | 1.3.3.5 | **Update C3D integration requirements** |  | 9d | 2007-03-20 | 2007-03-30 |  | 143d |  | Manav; Adopters | 216h |
| 87 | 1.3.3.5.1 | Developer update |  | 2d | 2007-03-20 | 2007-03-21 |  | 120d | 0d | Manav | 16h |
| 88 | 1.3.3.5.2 | Adopter review |  | 5d | 2007-03-22 | 2007-03-28 | 87 | 120d | 0d | Adopters | 40h |
| 89 | 1.3.3.5.3 | Developer update |  | 1d | 2007-03-29 | 2007-03-29 | 88 | 120d | 0d | Manav | 8h |
| 90 | 1.3.3.5.4 | Adopter sign-off |  | 1d | 2007-03-30 | 2007-03-30 | 89 | 120d |  | Adopters | 8h |
| 91 | 1.3.4 | Developer deliver use case document to BAH (task 3.1.1, task 5.2.1) | milestone | 0d | 2007-03-30 | 2007-03-30 | 65 | 143d | 0d | Patrick |  |
| 92 | 1.3.5 | BAH review use case document (task 3.1.1, task 5.2.1) |  | 10d | 2007-04-02 | 2007-04-13 | 91 | 143d |  | BAH | 80h |
| 93 | 1.3.6 | Developer deliver requirements document to BAH (task 3.2.1, task 5.3.1) | milestone | 0d | 2007-03-30 | 2007-03-30 | 65 | 143d | 0d | Patrick |  |
| 94 | 1.3.7 | BAH review requirements document (task 3.2.1, task 5.3.1) |  | 10d | 2007-04-02 | 2007-04-13 | 93 | 143d |  | BAH | 80h |
| 95 | 1.4 | **Analysis and Design** |  | 29d | 2007-03-07 | 2007-04-16 | 23, 2 | 142d |  | Developers; Adopters; BAH | 4248h |
| 96 | 1.4.1 | **Perform level 1 design** |  | 2d | 2007-03-07 | 2007-03-08 |  | 142d | 0d | Developers | 48h |
| 97 | 1.4.1.1 | Cursory BRIDG harmonization |  | 1d | 2007-03-07 | 2007-03-07 |  | 115d | 0d | Developers | 8h |
| 98 | 1.4.1.2 | Update implementation model |  | 1d | 2007-03-08 | 2007-03-08 | 97 | 115d |  | Developers | 8h |
| 99 | 1.4.1.3 | Cursory system design |  | 2d | 2007-03-07 | 2007-03-08 |  | 115d |  | Developers | 16h |
| 100 | 1.4.2 | **Modeling (task 3.3.1)** |  | 27d | 2007-03-09 | 2007-04-16 | 96 | 142d |  | Developers; Adopters | 1104h |
| 101 | 1.4.2.1 | **Update model** |  | 6d | 2007-03-09 | 2007-03-16 |  | 142d | 0d | Developers | 264h |
| 102 | 1.4.2.1.1 | **BRIDG harmonization** |  | 3d | 2007-03-09 | 2007-03-13 | 96 | 142d | 0d |  | 96h |
| 103 | 1.4.2.1.1.1 | Harmonize Study model |  | 2d | 2007-03-09 | 2007-03-12 |  | 120d |  | Kruttik; Priyatam; Manav | 48h |
| 104 | 1.4.2.1.1.2 | Harmonize Personnel model |  | 3d | 2007-03-09 | 2007-03-13 |  | 119d |  | Ramakrishna | 24h |
| 105 | 1.4.2.1.1.3 | Harmonize Multi-site Study model |  | 3d | 2007-03-09 | 2007-03-13 |  | 119d |  | Manav | 24h |

| ID | WBS | Task | Type | Duration | Start | Finish | Predecessors | Total slack | Free slack | Resources | Work |
| --- | --- | --- | --- | --- | --- | --- | --- | --- | --- | --- | --- |
| 106 | 1.4.2.1.2 | **Model implementation** |  | 3d | 2007-03-14 | 2007-03-16 | 102 | 142d |  |  | 120h |
| 107 | 1.4.2.1.2.1 | Implement Study model |  | 3d | 2007-03-14 | 2007-03-16 |  | 119d |  | Kruttik; Priyatam; Manav | 72h |
| 108 | 1.4.2.1.2.2 | Implement Personnel model |  | 3d | 2007-03-14 | 2007-03-16 |  | 119d |  | Ramakrishna | 24h |
| 109 | 1.4.2.1.2.3 | Implement Multi-site Study model |  | 3d | 2007-03-14 | 2007-03-16 |  | 119d |  | Manav | 24h |
| 110 | 1.4.2.2 | Adopter review |  | 5d | 2007-03-19 | 2007-03-23 | 101 | 142d | 0d | Adopters | 40h |
| 111 | 1.4.2.3 | **Update model** |  | 6d | 2007-03-26 | 2007-04-02 | 110 | 142d | 0d | Developers | 288h |
| 112 | 1.4.2.3.1 | **BRIDG harmonization** |  | 3d | 2007-03-26 | 2007-03-28 | 110 | 142d | 0d |  | 120h |
| 113 | 1.4.2.3.1.1 | Harmonize Study model |  | 3d | 2007-03-26 | 2007-03-28 |  | 119d |  | Kruttik; Priyatam; Manav | 72h |
| 114 | 1.4.2.3.1.2 | Harmonize Personnel model |  | 3d | 2007-03-26 | 2007-03-28 |  | 119d |  | Ramakrishna | 24h |
| 115 | 1.4.2.3.1.3 | Harmonize Multi-site Study model |  | 3d | 2007-03-26 | 2007-03-28 |  | 119d |  | Manav | 24h |
| 116 | 1.4.2.3.2 | **Model implementation** |  | 3d | 2007-03-29 | 2007-04-02 | 112 | 142d |  |  | 120h |
| 117 | 1.4.2.3.2.1 | Implement Study model |  | 3d | 2007-03-29 | 2007-04-02 |  | 119d |  | Kruttik; Priyatam; Manav | 72h |
| 118 | 1.4.2.3.2.2 | Implement Personnel model |  | 3d | 2007-03-29 | 2007-04-02 |  | 119d |  | Ramakrishna | 24h |
| 119 | 1.4.2.3.2.3 | Implement Multi-site Study model |  | 3d | 2007-03-29 | 2007-04-02 |  | 119d |  | Manav | 24h |
| 120 | 1.4.2.4 | Developer deliver UML to BAH (task 3.3.1) | milestone | 0d | 2007-04-02 | 2007-04-02 | 111 | 142d | 0d | Patrick |  |
| 121 | 1.4.2.5 | BAH review of UML (task 3.3.1) |  | 10d | 2007-04-03 | 2007-04-16 | 120 | 142d |  | BAH | 80h |
| 122 | 1.4.3 | **System design (task 3.4.1)** |  | 25d | 2007-03-09 | 2007-04-12 | 96 | 144d |  | Developers; BAH | 2160h |
| 123 | 1.4.3.1 | **Design eligibility** |  | 15d | 2007-03-09 | 2007-03-29 |  | 154d |  | Kruttik; Priyatam | 480h |
| 124 | 1.4.3.1.1 | Draft UML |  | 5d | 2007-03-09 | 2007-03-15 |  | 121d | 0d | Kruttik; Priyatam | 80h |
| 125 | 1.4.3.1.2 | Team review |  | 5d | 2007-03-16 | 2007-03-22 | 124 | 121d | 0d | Kruttik; Priyatam | 80h |
| 126 | 1.4.3.1.3 | Update design document |  | 5d | 2007-03-23 | 2007-03-29 | 125 | 121d |  | Kruttik; Priyatam | 80h |
| 127 | 1.4.3.2 | **Design personnel** |  | 15d | 2007-03-09 | 2007-03-29 |  | 154d |  | Priyatam; Kula | 480h |
| 128 | 1.4.3.2.1 | Draft UML |  | 5d | 2007-03-09 | 2007-03-15 |  | 121d | 0d | Priyatam; Kula | 80h |
| 129 | 1.4.3.2.2 | Team review |  | 5d | 2007-03-16 | 2007-03-22 | 128 | 121d | 0d | Priyatam; Kula | 80h |
| 130 | 1.4.3.2.3 | Update design document |  | 5d | 2007-03-23 | 2007-03-29 | 129 | 121d |  | Priyatam; Kula | 80h |

| ID | WBS | Task | Type | Duration | Start | Finish | Predecessors | Total slack | Free slack | Resources | Work |
| --- | --- | --- | --- | --- | --- | --- | --- | --- | --- | --- | --- |
| 131 | 1.4.3.3 | **Design registration management** |  | 15d | 2007-03-09 | 2007-03-29 |  | 154d |  | Ramakrishna | 240h |
| 132 | 1.4.3.3.1 | Draft UML |  | 5d | 2007-03-09 | 2007-03-15 |  | 131d | 0d | Ramakrishna | 40h |
| 133 | 1.4.3.3.2 | Team review |  | 5d | 2007-03-16 | 2007-03-22 | 132 | 131d | 0d | Ramakrishna | 40h |
| 134 | 1.4.3.3.3 | Update design document |  | 5d | 2007-03-23 | 2007-03-29 | 133 | 131d |  | Ramakrishna | 40h |
| 135 | 1.4.3.4 | **Design multi-site study** |  | 15d | 2007-03-09 | 2007-03-29 |  | 154d |  | Manav | 240h |
| 136 | 1.4.3.4.1 | Draft UML |  | 5d | 2007-03-09 | 2007-03-15 |  | 106d | 0d | Manav | 40h |
| 137 | 1.4.3.4.2 | Team review |  | 5d | 2007-03-16 | 2007-03-22 | 136 | 106d | 0d | Manav | 40h |
| 138 | 1.4.3.4.3 | Update design document |  | 5d | 2007-03-23 | 2007-03-29 | 137 | 106d |  | Manav | 40h |
| 139 | 1.4.3.5 | **Design C3D integration** |  | 15d | 2007-03-09 | 2007-03-29 |  | 144d | 0d | Manav | 240h |
| 140 | 1.4.3.5.1 | Draft UML |  | 5d | 2007-03-09 | 2007-03-15 |  | 144d | 0d | Manav | 40h |
| 141 | 1.4.3.5.2 | Team review |  | 5d | 2007-03-16 | 2007-03-22 | 140 | 144d | 0d | Manav | 40h |
| 142 | 1.4.3.5.3 | Update design document |  | 5d | 2007-03-23 | 2007-03-29 | 141 | 144d |  | Manav | 40h |
| 143 | 1.4.3.6 | Deliver design doc to BAH (task 3.4.1) | milestone | 0d | 2007-03-29 | 2007-03-29 | 139 | 144d | 0d | Patrick |  |
| 144 | 1.4.3.7 | BAH review design doc (task 3.4.1) |  | 10d | 2007-03-30 | 2007-04-12 | 143 | 144d |  | BAH | 80h |
| 145 | 1.4.4 | **Research** |  | 10d | 2007-03-09 | 2007-03-22 | 96 | 159d |  | Manav | 240h |
| 146 | 1.4.4.1 | **Investigate C3D integration** |  | 10d | 2007-03-09 | 2007-03-22 | 96 | 159d |  | Manav | 160h |
| 147 | 1.4.4.1.1 | Review release 1 code |  | 5d | 2007-03-09 | 2007-03-15 |  | 159d | 0d | Manav | 40h |
| 148 | 1.4.4.1.2 | Review release 1 security model |  | 5d | 2007-03-16 | 2007-03-22 | 147 | 159d |  | Manav | 40h |
| 149 | 1.5 | **Implementation (task 3.5.1)** |  | 25d | 2007-03-09 | 2007-04-12 | 96, 2 | 144d |  | Developers; BAH | 2984h |
| 150 | 1.5.1 | **Database layer** |  | 6d | 2007-03-09 | 2007-03-16 |  | 144d | 9d | Developers | 432h |
| 151 | 1.5.1.1 | **Eligibility model** |  | 4d | 2007-03-09 | 2007-03-14 |  | 153d | 0d | Kruttik; Priyatam | 112h |
| 152 | 1.5.1.1.1 | Create DDLs |  | 1d | 2007-03-09 | 2007-03-09 |  | 130d | 0d | Kruttik; Priyatam | 16h |
| 153 | 1.5.1.1.2 | Apply to database |  | 1d | 2007-03-12 | 2007-03-12 | 152 | 130d | 0d | Kruttik; Priyatam | 16h |
| 154 | 1.5.1.1.3 | Create test data |  | 1d | 2007-03-13 | 2007-03-13 | 153 | 130d | 0d | Kruttik; Priyatam | 16h |
| 155 | 1.5.1.1.4 | Create data access objects (DAOs) |  | 1d | 2007-03-14 | 2007-03-14 | 154 | 130d |  |  |  |

| ID | WBS | Task | Duration | Start | Finish | Predecessors | Total slack | Free slack | Resources | Work |
| --- | --- | --- | --- | --- | --- | --- | --- | --- | --- | --- |
| 156 | 1.5.1.2 | **Study personnel** | 6d | 2007-03-09 | 2007-03-16 |  | 152d | 0d | Priyatam; Kula | 176h |
| 157 | 1.5.1.2.1 | Investigate how to implement Person with Role | 2d | 2007-03-09 | 2007-03-12 |  | 129d | 0d | Priyatam; Kula | 32h |
| 158 | 1.5.1.2.2 | Create DDLs | 1d | 2007-03-13 | 2007-03-13 | 157 | 129d | 0d | Priyatam; Kula | 16h |
| 159 | 1.5.1.2.3 | Apply to database | 1d | 2007-03-14 | 2007-03-14 | 158 | 129d | 0d | Priyatam; Kula | 16h |
| 160 | 1.5.1.2.4 | Create test data | 1d | 2007-03-15 | 2007-03-15 | 159 | 129d | 0d | Priyatam; Kula | 16h |
| 161 | 1.5.1.2.5 | Create data access objects (DAOs) | 1d | 2007-03-16 | 2007-03-16 | 160 | 129d |  |  |  |
| 162 | 1.5.1.3 | **Multi-site** | 4d | 2007-03-09 | 2007-03-14 |  | 144d | 0d | Manav | 64h |
| 163 | 1.5.1.3.1 | Create DDLs | 1d | 2007-03-09 | 2007-03-09 |  | 144d | 0d | Manav | 8h |
| 164 | 1.5.1.3.2 | Apply to database | 1d | 2007-03-12 | 2007-03-12 | 163 | 144d | 0d | Manav | 8h |
| 165 | 1.5.1.3.3 | Create test data | 1d | 2007-03-13 | 2007-03-13 | 164 | 144d | 0d | Manav | 8h |
| 166 | 1.5.1.3.4 | Create data access objects (DAOs) | 1d | 2007-03-14 | 2007-03-14 | 165 | 144d |  | Manav | 8h |
| 167 | 1.5.1.4 | Unit testing | 4d | 2007-03-09 | 2007-03-14 |  | 155d |  | Developers | 32h |
| 168 | 1.5.2 | **Deployment** | 2d | 2007-03-15 | 2007-03-16 |  | 153d | 9d | Manav | 32h |
| 169 | 1.5.2.1 | Deploy a second C3PR for multi-site testing | 2d | 2007-03-15 | 2007-03-16 | 162 | 130d |  | Manav | 16h |
| 170 | 1.5.3 | **Business layer** | 12d | 2007-03-09 | 2007-03-26 |  | 148d |  | Developers | 720h |
| 171 | 1.5.3.1 | **Implement eligibility APIs** | 7d | 2007-03-15 | 2007-03-23 | 151 | 153d | 0d | Kruttik; Priyatam | 224h |
| 172 | 1.5.3.1.1 | Design APIs | 2d | 2007-03-15 | 2007-03-16 |  | 130d | 0d | Kruttik; Priyatam | 32h |
| 173 | 1.5.3.1.2 | Implement APIs | 3d | 2007-03-19 | 2007-03-21 | 172 | 130d | 0d | Kruttik; Priyatam | 48h |
| 174 | 1.5.3.1.3 | Deploy APIs | 2d | 2007-03-22 | 2007-03-23 | 173 | 130d |  | Kruttik; Priyatam | 32h |
| 175 | 1.5.3.2 | **Implement study personnel APIs** | 6d | 2007-03-19 | 2007-03-26 | 156 | 152d | 0d | Ramakrishna | 96h |
| 176 | 1.5.3.2.1 | Design APIs | 2d | 2007-03-19 | 2007-03-20 |  | 129d | 0d | Ramakrishna | 16h |
| 177 | 1.5.3.2.2 | Implement APIs | 3d | 2007-03-21 | 2007-03-23 | 176 | 129d | 0d | Ramakrishna | 24h |
| 178 | 1.5.3.2.3 | Deploy APIs | 1d | 2007-03-26 | 2007-03-26 | 177 | 129d |  | Ramakrishna | 8h |
| 179 | 1.5.3.3 | **Implement C3PR registration APIs** | 6d | 2007-03-15 | 2007-03-22 | 162 | 144d | 0d | Manav | 96h |
| 180 | 1.5.3.3.1 | Design APIs | 2d | 2007-03-15 | 2007-03-16 |  | 121d | 0d | Manav | 16h |
| 181 | 1.5.3.3.2 | Implement APIs | 3d | 2007-03-19 | 2007-03-21 | 180 | 121d | 0d | Manav | 24h |
| 182 | 1.5.3.3.3 | Deploy APIs | 1d | 2007-03-22 | 2007-03-22 | 181 | 121d |  | Manav | 8h |

| ID | WBS | Task | Type | Duration | Start | Finish | Predecessors | Total slack | Free slack | Resources | Work |
| --- | --- | --- | --- | --- | --- | --- | --- | --- | --- | --- | --- |
| 183 | 1.5.3.4 | **Business rules** |  | 5d | 2007-03-09 | 2007-03-15 |  | 158d |  | Ramakrishna | 160h |
| 184 | 1.5.3.4.1 | Duplicate registrations |  | 5d | 2007-03-09 | 2007-03-15 |  | 135d | 0d | Ramakrishna | 40h |
| 185 | 1.5.3.4.2 | Duplicate subjects |  | 5d | 2007-03-09 | 2007-03-15 |  | 141d |  | Ramakrishna | 40h |
| 186 | 1.5.3.4.3 | Duplicate studies |  | 5d | 2007-03-09 | 2007-03-15 |  | 141d |  | Ramakrishna | 40h |
| 187 | 1.5.3.5 | Unit testing |  | 6d | 2007-03-16 | 2007-03-23 | 184 | 135d |  | Developers | 48h |
| 188 | 1.5.4 | **ESB** |  | 5d | 2007-03-23 | 2007-03-29 | 179 | 144d | 0d | Manav | 120h |
| 189 | 1.5.4.1 | Implement inbound-binding component for C3PR registration |  | 5d | 2007-03-23 | 2007-03-29 |  | 144d |  | Manav | 40h |
| 190 | 1.5.4.2 | Unit testing |  | 5d | 2007-03-23 | 2007-03-29 |  | 144d |  | Developers | 40h |
| 191 | 1.5.5 | **Web interface** |  | 17d | 2007-03-09 | 2007-04-02 |  | 152d |  | Developers | 960h |
| 192 | 1.5.5.1 | **Modify study management interface** |  | 6d | 2007-03-23 | 2007-03-30 |  | 153d |  | Kruttik; Priyatam; Manav | 384h |
| 193 | 1.5.5.1.1 | Manage eligibility criteria |  | 5d | 2007-03-26 | 2007-03-30 | 171 | 130d |  | Kruttik; Priyatam; Manav | 120h |
| 194 | 1.5.5.1.2 | Manage multi-site study |  | 5d | 2007-03-23 | 2007-03-29 | 179 | 131d |  | Kruttik; Priyatam; Manav | 120h |
| 195 | 1.5.5.2 | **Modify study personnel management interface** |  | 5d | 2007-03-27 | 2007-04-02 |  | 152d |  | Priyatam; Kula | 160h |
| 196 | 1.5.5.2.1 | Manage study personnel |  | 5d | 2007-03-27 | 2007-04-02 | 175 | 129d |  | Priyatam; Kula | 80h |
| 197 | 1.5.5.3 | **Modify registration interface** |  | 5d | 2007-03-26 | 2007-03-30 |  | 153d |  | Kruttik; Priyatam | 160h |
| 198 | 1.5.5.3.1 | Check eligibility |  | 5d | 2007-03-26 | 2007-03-30 | 171 | 130d |  | Kruttik; Priyatam | 80h |
| 199 | 1.5.5.4 | **Modify registration management interface** |  | 5d | 2007-03-09 | 2007-03-15 |  | 164d |  | Ramakrishna | 80h |
| 200 | 1.5.5.4.1 | Manage study subject registration |  | 5d | 2007-03-09 | 2007-03-15 |  | 141d |  | Ramakrishna | 40h |
| 201 | 1.5.5.5 | Unit testing |  | 5d | 2007-03-09 | 2007-03-15 |  | 141d |  | Developers | 40h |
| 202 | 1.5.6 | **Installer** |  | 15d | 2007-03-09 | 2007-03-29 |  | 154d |  | Kruttik | 240h |
| 203 | 1.5.6.1 | Externalize properties |  | 5d | 2007-03-09 | 2007-03-15 |  | 131d | 0d | Kruttik | 40h |
| 204 | 1.5.6.2 | Apply DDLs via ant |  | 5d | 2007-03-16 | 2007-03-22 | 203 | 131d | 0d | Kruttik | 40h |
| 205 | 1.5.6.3 | Make WAR file |  | 5d | 2007-03-23 | 2007-03-29 | 204 | 131d |  | Kruttik | 40h |
| 206 | 1.5.7 | Deliver codebase to BAH (task 3.5.1) | milestone | 0d | 2007-03-29 | 2007-03-29 | 150, 188, 168 | 144d | 0d | Patrick |  |
| 207 | 1.5.8 | BAH review codebase (task 3.5.1) |  | 10d | 2007-03-30 | 2007-04-12 | 206 | 144d |  | BAH | 80h |

| ID | WBS | Task | Type | Duration | Start | Finish | Predecessors | Total slack | Free slack | Resources | Work |
| --- | --- | --- | --- | --- | --- | --- | --- | --- | --- | --- | --- |
| 208 | 1.6 | **Testing** |  | 30d | 2007-03-01 | 2007-04-11 | 2 | 145d |  | Developers; Adopters; BAH | 4952h |
| 209 | 1.6.1 | **Developer testing** |  | 30d | 2007-03-01 | 2007-04-11 |  | 145d |  | BAH; Adopters; Developers | 1968h |
| 210 | 1.6.1.1 | **Update developer test plan (task 3.6.1, task 5.4.1)** |  | 30d | 2007-03-01 | 2007-04-11 |  | 145d |  | Developers; Adopters; BAH | 960h |
| 211 | 1.6.1.1.1 | Developer draft |  | 5d | 2007-03-01 | 2007-03-07 |  | 145d | 0d | Developers | 40h |
| 212 | 1.6.1.1.2 | Adopter review |  | 5d | 2007-03-08 | 2007-03-14 | 211 | 145d | 0d | Adopters | 40h |
| 213 | 1.6.1.1.3 | Developer update |  | 5d | 2007-03-15 | 2007-03-21 | 212 | 145d | 0d | Developers | 40h |
| 214 | 1.6.1.1.4 | Adopter review and sign |  | 5d | 2007-03-22 | 2007-03-28 | 213 | 145d | 0d | Adopters | 40h |
| 215 | 1.6.1.1.5 | Deliver signed test plan to BAH (task 3.6.1, task 5.4.1) | milestone | 0d | 2007-03-28 | 2007-03-28 | 214 | 145d | 0d | Patrick |  |
| 216 | 1.6.1.1.6 | BAH review signed test plan (task 3.6.1, task 5.4.1) |  | 10d | 2007-03-29 | 2007-04-11 | 215 | 145d |  | BAH | 80h |
| 217 | 1.6.1.2 | **Integration and system testing (task 3.8.1)** |  | 10d | 2007-03-23 | 2007-04-05 | 211, 206FS-5d | 149d |  | Developers; BAH | 288h |
| 218 | 1.6.1.2.1 | Generate test data |  | 1d | 2007-03-23 | 2007-03-23 |  | 158d |  | Developers | 8h |
| 219 | 1.6.1.2.2 | Write tests |  | 3d | 2007-03-23 | 2007-03-27 |  | 154d | 0d | Developers | 24h |
| 220 | 1.6.1.2.3 | Validate tests |  | 1d | 2007-03-28 | 2007-03-28 | 219 | 154d | 0d | Developers | 8h |
| 221 | 1.6.1.2.4 | Generate test report |  | 1d | 2007-03-29 | 2007-03-29 | 220 | 154d |  | Developers | 8h |
| 222 | 1.6.1.2.5 | Deliver test report to BAH (task 3.8.1) | milestone | 0d | 2007-03-23 | 2007-03-23 |  | 159d |  | Patrick |  |
| 223 | 1.6.1.2.6 | BAH review test report (task 3.8.1) |  | 10d | 2007-03-23 | 2007-04-05 |  | 149d |  | BAH | 80h |
| 224 | 1.6.2 | **Adopter testing** |  | 30d | 2007-03-01 | 2007-04-11 |  | 145d |  | Adopters; Developers; BAH | 2264h |
| 225 | 1.6.2.1 | **Update adopter test plan (task 5.5.1)** |  | 30d | 2007-03-01 | 2007-04-11 |  | 145d |  | Adopters; Developers; BAH | 1000h |
| 226 | 1.6.2.1.1 | Adopter update test script |  | 5d | 2007-03-01 | 2007-03-07 |  | 145d | 0d | Adopters | 40h |
| 227 | 1.6.2.1.2 | Adopter update test approach |  | 5d | 2007-03-08 | 2007-03-14 | 226 | 145d | 0d | Adopters | 40h |
| 228 | 1.6.2.1.3 | Developer review |  | 5d | 2007-03-15 | 2007-03-21 | 227 | 145d | 0d | Patrick; Ram | 80h |
| 229 | 1.6.2.1.4 | Adopter update |  | 5d | 2007-03-22 | 2007-03-28 | 228 | 145d | 0d | Adopters | 40h |
| 230 | 1.6.2.1.5 | Developer deliver adopter test plan to BAH (task 5.5.1) | milestone | 0d | 2007-03-28 | 2007-03-28 | 229 | 145d | 0d | Patrick |  |
| 231 | 1.6.2.1.6 | BAH review adopter test plan (task 5.5.1) |  | 10d | 2007-03-29 | 2007-04-11 | 230 | 145d |  | BAH | 80h |

| ID | WBS | Task | Type | Duration | Start | Finish | Predecessors | Total slack | Free slack | Resources | Work |
| --- | --- | --- | --- | --- | --- | --- | --- | --- | --- | --- | --- |
| 232 | 1.6.2.2 | **Functional testing (task 5.6.1)** |  | 22d | 2007-03-08 | 2007-04-06 | 226 | 148d |  | Adopters; BAH | 544h |
| 233 | 1.6.2.2.1 | Adopter create test data |  | 5d | 2007-03-08 | 2007-03-14 |  | 148d | 0d | Adopters | 40h |
| 234 | 1.6.2.2.2 | Adopter perform test script |  | 5d | 2007-03-15 | 2007-03-21 | 233 | 148d | 0d | Adopters | 40h |
| 235 | 1.6.2.2.3 | Adopter document results |  | 2d | 2007-03-22 | 2007-03-23 | 234 | 148d | 0d | Adopters | 16h |
| 236 | 1.6.2.2.4 | Adopter log bugs |  | 2d | 2007-03-26 | 2007-03-27 | 235 | 156d |  | Adopters | 16h |
| 237 | 1.6.2.2.5 | Developer deliver adopter test report to BAH (task 5.6.1) | milestone | 0d | 2007-03-23 | 2007-03-23 | 235 | 148d | 0d | Patrick |  |
| 238 | 1.6.2.2.6 | BAH review adopter test report (task 5.6.1) |  | 10d | 2007-03-26 | 2007-04-06 | 237 | 148d |  | BAH | 80h |
| 239 | 1.7 | **Documentation** |  | 15d | 2007-03-23 | 2007-04-12 | 2 | 144d |  | Developers; Adopters; BAH | 1656h |
| 240 | 1.7.1 | **Installation guide (task 3.10.1)** |  | 13d | 2007-03-27 | 2007-04-12 | 206FS-3d | 144d |  | Developers; BAH | 312h |
| 241 | 1.7.1.1 | Update installation guide |  | 3d | 2007-03-27 | 2007-03-29 |  | 144d | 0d | Developers | 24h |
| 242 | 1.7.1.2 | Deliver installation guide to BAH (task 3.10.1) | milestone | 0d | 2007-03-29 | 2007-03-29 | 241 | 144d | 0d | Patrick |  |
| 243 | 1.7.1.3 | BAH review of installation guide (task 3.10.1) |  | 10d | 2007-03-30 | 2007-04-12 | 242 | 144d |  | BAH | 80h |
| 244 | 1.7.2 | **Administration guide (task 3.13.1)** |  | 13d | 2007-03-27 | 2007-04-12 | 206FS-3d | 144d |  | Developers; BAH | 312h |
| 245 | 1.7.2.1 | Update administration guide |  | 3d | 2007-03-27 | 2007-03-29 |  | 144d | 0d | Developers | 24h |
| 246 | 1.7.2.2 | Deliver administration guide to BAH (task 3.13.1) | milestone | 0d | 2007-03-29 | 2007-03-29 | 245 | 144d | 0d | Patrick |  |
| 247 | 1.7.2.3 | BAH review of administration guide (task 3.13.1) |  | 10d | 2007-03-30 | 2007-04-12 | 246 | 144d |  | BAH | 80h |
| 248 | 1.7.3 | **Release notes (task 3.14.1)** |  | 13d | 2007-03-27 | 2007-04-12 | 206FS-3d | 144d |  | Developers; BAH | 312h |
| 249 | 1.7.3.1 | Update release notes |  | 3d | 2007-03-27 | 2007-03-29 |  | 144d | 0d | Developers | 24h |
| 250 | 1.7.3.2 | Deliver release notes to BAH (task 3.14.1) | milestone | 0d | 2007-03-29 | 2007-03-29 | 249 | 144d | 0d | Patrick |  |
| 251 | 1.7.3.3 | BAH review of release notes (task 3.14.1) |  | 10d | 2007-03-30 | 2007-04-12 | 250 | 144d |  | BAH | 80h |
| 252 | 1.7.4 | **Adopter summary of C3PR (task 5.1.1)** |  | 15d | 2007-03-23 | 2007-04-12 | 206FS-5d | 144d |  | Adopters; BAH | 360h |
| 253 | 1.7.4.1 | Adopter update summary |  | 3d | 2007-03-23 | 2007-03-27 |  | 144d | 0d | Adopters | 24h |
| 254 | 1.7.4.2 | Developer review summary |  | 1d | 2007-03-28 | 2007-03-28 | 253 | 144d | 0d | Developers | 8h |
| 255 | 1.7.4.3 | Adopter update summary |  | 1d | 2007-03-29 | 2007-03-29 | 254 | 144d | 0d | Adopters | 8h |
| 256 | 1.7.4.4 | Developer deliver C3PR summary to BAH (task 5.1.1) | milestone | 0d | 2007-03-29 | 2007-03-29 | 255 | 144d | 0d | Patrick |  |
| 257 | 1.7.4.5 | BAH review of C3PR summary (task 5.1.1) |  | 10d | 2007-03-30 | 2007-04-12 | 256 | 144d |  | BAH | 80h |

| ID | WBS | Task | Type | Duration | Start | Finish | Predecessors | Total slack | Free slack | Constraint | Resources | Work |
| --- | --- | --- | --- | --- | --- | --- | --- | --- | --- | --- | --- | --- |
| 258 | 1.8 | **Support** |  | 22d | 2007-03-01 | 2007-03-30 | 2 | 153d |  |  | Developers | 528h |
| 259 | 1.8.1 | Adopter support |  | 22d | 2007-03-01 | 2007-03-30 |  | 153d |  |  | Developers | 176h |
| 260 | 1.8.2 | Bug fixing |  | 22d | 2007-03-01 | 2007-03-30 |  | 153d |  |  | Developers | 176h |
| 261 | 2 | **Iteration 2 (eligibility, study personnel/security, C3D integration, multi-site study)** |  | 35d | 2007-04-02 | 2007-05-18 |  | 118d |  |  |  | 20400h |
| 262 | 2.1 | Iteration start | milestone | 0d | 2007-04-02 | 2007-04-02 |  | 118d | 0d | start no earlier than 2007-04-02 |  |  |
| 263 | 2.2 | **Project Management** |  | 30d | 2007-04-02 | 2007-05-11 | 262 | 123d |  |  | Patrick; Adopters; BAH | 2640h |
| 264 | 2.2.1 | **Draft project plan (task 1.1)** |  | 30d | 2007-04-02 | 2007-05-11 |  | 123d |  |  | Patrick; Adopters; BAH | 960h |
| 265 | 2.2.1.1 | Developer draft |  | 5d | 2007-04-02 | 2007-04-06 |  | 100d | 0d |  | Patrick | 40h |
| 266 | 2.2.1.2 | BAH review |  | 5d | 2007-04-09 | 2007-04-13 | 265 | 100d | 0d |  | BAH | 40h |
| 267 | 2.2.1.3 | Developer update |  | 5d | 2007-04-16 | 2007-04-20 | 266 | 100d | 0d |  | Patrick | 40h |
| 268 | 2.2.1.4 | Adopter review |  | 3d | 2007-04-23 | 2007-04-25 | 267 | 100d | 0d |  | Adopters | 24h |
| 269 | 2.2.1.5 | Developer update |  | 2d | 2007-04-26 | 2007-04-27 | 268 | 100d | 0d |  | Patrick | 16h |
| 270 | 2.2.1.6 | Deliver project plan to BAH (task 1.1) | milestone | 0d | 2007-04-27 | 2007-04-27 | 269 | 100d | 0d |  | Patrick |  |
| 271 | 2.2.1.7 | BAH review project plan (task 1.1) |  | 10d | 2007-04-30 | 2007-05-11 | 270 | 100d |  |  | BAH | 80h |
| 272 | 2.2.2 | **Update risk matrix (task 1.3.1)** |  | 20d | 2007-04-02 | 2007-04-27 |  | 123d |  |  | Patrick; BAH | 480h |
| 273 | 2.2.2.1 | Update risk matrix for week 1 |  | 5d | 2007-04-02 | 2007-04-06 |  | 100d | 0d |  | Patrick | 40h |
| 274 | 2.2.2.2 | Update risk matrix for week 2 |  | 5d | 2007-04-09 | 2007-04-13 | 273 | 100d | 0d |  | Patrick | 40h |
| 275 | 2.2.2.3 | Deliver risk matrix to BAH (task 1.3.1) | milestone | 0d | 2007-04-13 | 2007-04-13 | 274 | 100d | 0d |  | Patrick |  |
| 276 | 2.2.2.4 | BAH review risk matrix (task 1.3.1) |  | 10d | 2007-04-16 | 2007-04-27 | 275 | 110d |  |  | BAH | 80h |
| 277 | 2.2.3 | **Monthly report (task 1.3.1)** |  | 20d | 2007-04-16 | 2007-05-11 | 275 | 123d |  |  | Patrick; BAH | 480h |
| 278 | 2.2.3.1 | Update risk matrix for week 3 |  | 5d | 2007-04-16 | 2007-04-20 |  | 100d | 0d |  | Patrick | 40h |
| 279 | 2.2.3.2 | Update risk matrix for week 4 |  | 5d | 2007-04-23 | 2007-04-27 | 278 | 100d | 0d |  | Patrick | 40h |
| 280 | 2.2.3.3 | Deliver monthly report and risk matrix to BAH (task 1.3.1) | milestone | 0d | 2007-04-27 | 2007-04-27 | 279 | 100d | 0d |  | Patrick |  |
| 281 | 2.2.3.4 | BAH review monthly report and risk matrix (task 1.3.1) |  | 10d | 2007-04-30 | 2007-05-11 | 280 | 100d |  |  | BAH | 80h |

| ID | WBS | Task | Duration | Start | Finish | Predecessors | Total slack | Free slack | Resources | Work |
| --- | --- | --- | --- | --- | --- | --- | --- | --- | --- | --- |
| 282 | 2.3 | **Requirements and use cases** | 32d | 2007-04-02 | 2007-05-15 | 262 | 118d |  | Developers; Adopters; BAH | 4048h |
| 283 | 2.3.1 | **Create level 1 use cases and requirements** | 4d | 2007-04-02 | 2007-04-05 |  | 118d | 0d | Developers | 288h |
| 284 | 2.3.1.1 | **Level 1 use cases for eligibility** | 2d | 2007-04-02 | 2007-04-03 |  | 120d |  | Kruttik; Priyatam | 64h |
| 285 | 2.3.1.1.1 | Use case document (task 3.1.1) | 1d | 2007-04-02 | 2007-04-02 |  | 97d | 0d | Kruttik; Priyatam | 16h |
| 286 | 2.3.1.1.2 | Requirements document (3.2.1) | 1d | 2007-04-03 | 2007-04-03 | 285 | 97d |  | Kruttik; Priyatam | 16h |
| 287 | 2.3.1.2 | **Level 1 use cases for study personnel** | 2d | 2007-04-02 | 2007-04-03 |  | 120d |  | Priyatam; Kula | 64h |
| 288 | 2.3.1.2.1 | Use case document (task 3.1.1) | 1d | 2007-04-02 | 2007-04-02 |  | 97d | 0d | Priyatam; Kula | 16h |
| 289 | 2.3.1.2.2 | Requirements document (3.2.1) | 1d | 2007-04-03 | 2007-04-03 | 288 | 97d |  | Priyatam; Kula | 16h |
| 290 | 2.3.1.3 | **Level 1 use cases for registration management** | 2d | 2007-04-02 | 2007-04-03 |  | 120d |  | Ramakrishna | 32h |
| 291 | 2.3.1.3.1 | Use case document (task 3.1.1) | 1d | 2007-04-02 | 2007-04-02 |  | 97d | 0d | Ramakrishna | 8h |
| 292 | 2.3.1.3.2 | Requirements document (3.2.1) | 1d | 2007-04-03 | 2007-04-03 | 291 | 97d |  | Ramakrishna | 8h |
| 293 | 2.3.1.4 | **Level 1 use cases for multi-site study** | 4d | 2007-04-02 | 2007-04-05 |  | 118d |  | Manav | 64h |
| 294 | 2.3.1.4.1 | Use case document (task 3.1.1) | 2d | 2007-04-02 | 2007-04-03 |  | 95d | 0d | Manav | 16h |
| 295 | 2.3.1.4.2 | Requirements document (3.2.1) | 2d | 2007-04-04 | 2007-04-05 | 294 | 95d |  | Manav | 16h |
| 296 | 2.3.1.5 | **Level 1 use cases for C3D integration** | 2d | 2007-04-02 | 2007-04-03 |  | 120d |  | Manav | 32h |
| 297 | 2.3.1.5.1 | Use case document (task 3.1.1) | 1d | 2007-04-02 | 2007-04-02 |  | 97d | 0d | Manav | 8h |
| 298 | 2.3.1.5.2 | Requirements document (3.2.1) | 1d | 2007-04-03 | 2007-04-03 | 297 | 97d |  | Manav | 8h |
| 299 | 2.3.2 | **Update use case document (task 3.1.1, task 5.2.1)** | 9d | 2007-04-06 | 2007-04-18 | 283 | 121d | 0d | Developers; Adopters | 1416h |
| 300 | 2.3.2.1 | **Update eligibility use cases** | 9d | 2007-04-06 | 2007-04-18 |  | 121d |  | Kruttik; Adopters; Priyatam | 312h |
| 301 | 2.3.2.1.1 | Developer update | 2d | 2007-04-06 | 2007-04-09 |  | 98d | 0d | Kruttik; Priyatam | 32h |
| 302 | 2.3.2.1.2 | Adopter review | 5d | 2007-04-10 | 2007-04-16 | 301 | 98d | 0d | Adopters | 40h |
| 303 | 2.3.2.1.3 | Developer update | 1d | 2007-04-17 | 2007-04-17 | 302 | 98d | 0d | Kruttik; Priyatam | 16h |
| 304 | 2.3.2.1.4 | Adopter sign-off | 1d | 2007-04-18 | 2007-04-18 | 303 | 98d |  | Adopters | 8h |
| 305 | 2.3.2.2 | **Update study personnel use cases** | 9d | 2007-04-06 | 2007-04-18 |  | 121d |  | Priyatam; Adopters; Kula | 312h |
| 306 | 2.3.2.2.1 | Developer update | 2d | 2007-04-06 | 2007-04-09 |  | 98d | 0d | Priyatam; Kula | 32h |
| 307 | 2.3.2.2.2 | Adopter review | 5d | 2007-04-10 | 2007-04-16 | 306 | 98d | 0d | Adopters | 40h |
| 308 | 2.3.2.2.3 | Developer update | 1d | 2007-04-17 | 2007-04-17 | 307 | 98d | 0d | Priyatam; Kula | 16h |
| 309 | 2.3.2.2.4 | Adopter sign-off | 1d | 2007-04-18 | 2007-04-18 | 308 | 98d |  | Adopters | 8h |

| ID | WBS | Task | Duration | Start | Finish | Predecessors | Total slack | Free slack | Resources | Work |
| --- | --- | --- | --- | --- | --- | --- | --- | --- | --- | --- |
| 310 | 2.3.2.3 | **Update registration management use cases** | 9d | 2007-04-06 | 2007-04-18 |  | 121d |  | Ramakrishna; Adopters | 216h |
| 311 | 2.3.2.3.1 | Developer update | 2d | 2007-04-06 | 2007-04-09 |  | 98d | 0d | Ramakrishna | 16h |
| 312 | 2.3.2.3.2 | Adopter review | 5d | 2007-04-10 | 2007-04-16 | 311 | 98d | 0d | Adopters | 40h |
| 313 | 2.3.2.3.3 | Developer update | 1d | 2007-04-17 | 2007-04-17 | 312 | 98d | 0d | Ramakrishna | 8h |
| 314 | 2.3.2.3.4 | Adopter sign-off | 1d | 2007-04-18 | 2007-04-18 | 313 | 98d |  | Adopters | 8h |
| 315 | 2.3.2.4 | **Update multi-site trial use cases** | 9d | 2007-04-06 | 2007-04-18 |  | 121d |  | Manav; Adopters | 216h |
| 316 | 2.3.2.4.1 | Developer update | 2d | 2007-04-06 | 2007-04-09 |  | 98d | 0d | Manav | 16h |
| 317 | 2.3.2.4.2 | Adopter review | 5d | 2007-04-10 | 2007-04-16 | 316 | 98d | 0d | Adopters | 40h |
| 318 | 2.3.2.4.3 | Developer update | 1d | 2007-04-17 | 2007-04-17 | 317 | 98d | 0d | Manav | 8h |
| 319 | 2.3.2.4.4 | Adopter sign-off | 1d | 2007-04-18 | 2007-04-18 | 318 | 98d |  | Adopters | 8h |
| 320 | 2.3.2.5 | **Update C3D integration use cases** | 9d | 2007-04-06 | 2007-04-18 |  | 121d |  | Manav; Adopters | 216h |
| 321 | 2.3.2.5.1 | Developer update | 2d | 2007-04-06 | 2007-04-09 |  | 98d | 0d | Manav | 16h |
| 322 | 2.3.2.5.2 | Adopter review | 5d | 2007-04-10 | 2007-04-16 | 321 | 98d | 0d | Adopters | 40h |
| 323 | 2.3.2.5.3 | Developer update | 1d | 2007-04-17 | 2007-04-17 | 322 | 98d | 0d | Manav | 8h |
| 324 | 2.3.2.5.4 | Adopter sign-off | 1d | 2007-04-18 | 2007-04-18 | 323 | 98d |  | Adopters | 8h |
| 325 | 2.3.3 | **Update requirements document (task 3.2.1, task 5.3.1)** | 9d | 2007-04-19 | 2007-05-01 | 299 | 121d | 0d | Developers; Adopters | 1416h |
| 326 | 2.3.3.1 | **Update eligibility requirements** | 9d | 2007-04-19 | 2007-05-01 |  | 121d |  | Kruttik; Priyatam; Adopters | 312h |
| 327 | 2.3.3.1.1 | Developer update | 2d | 2007-04-19 | 2007-04-20 |  | 98d | 0d | Kruttik; Priyatam | 32h |
| 328 | 2.3.3.1.2 | Adopter review | 5d | 2007-04-23 | 2007-04-27 | 327 | 98d | 0d | Adopters | 40h |
| 329 | 2.3.3.1.3 | Developer update | 1d | 2007-04-30 | 2007-04-30 | 328 | 98d | 0d | Kruttik; Priyatam | 16h |
| 330 | 2.3.3.1.4 | Adopter sign-off | 1d | 2007-05-01 | 2007-05-01 | 329 | 98d |  | Adopters | 8h |
| 331 | 2.3.3.2 | **Update study personel requirements** | 9d | 2007-04-19 | 2007-05-01 |  | 121d |  | Priyatam; Adopters; Kula | 312h |
| 332 | 2.3.3.2.1 | Developer update | 2d | 2007-04-19 | 2007-04-20 |  | 98d | 0d | Priyatam; Kula | 32h |
| 333 | 2.3.3.2.2 | Adopter review | 5d | 2007-04-23 | 2007-04-27 | 332 | 98d | 0d | Adopters | 40h |
| 334 | 2.3.3.2.3 | Developer update | 1d | 2007-04-30 | 2007-04-30 | 333 | 98d | 0d | Priyatam; Kula | 16h |
| 335 | 2.3.3.2.4 | Adopter sign-off | 1d | 2007-05-01 | 2007-05-01 | 334 | 98d |  | Adopters | 8h |

| ID | WBS | Task | Type | Duration | Start | Finish | Predecessors | Total slack | Free slack | Resources | Work |
| --- | --- | --- | --- | --- | --- | --- | --- | --- | --- | --- | --- |
| 336 | 2.3.3.3 | **Update registration management requirements** |  | 9d | 2007-04-19 | 2007-05-01 |  | 121d |  | Ramakrishna; Adopters | 216h |
| 337 | 2.3.3.3.1 | Developer update |  | 2d | 2007-04-19 | 2007-04-20 |  | 98d | 0d | Ramakrishna | 16h |
| 338 | 2.3.3.3.2 | Adopter review |  | 5d | 2007-04-23 | 2007-04-27 | 337 | 98d | 0d | Adopters | 40h |
| 339 | 2.3.3.3.3 | Developer update |  | 1d | 2007-04-30 | 2007-04-30 | 338 | 98d | 0d | Ramakrishna | 8h |
| 340 | 2.3.3.3.4 | Adopter sign-off |  | 1d | 2007-05-01 | 2007-05-01 | 339 | 98d |  | Adopters | 8h |
| 341 | 2.3.3.4 | **Update multi-site trial requirements** |  | 9d | 2007-04-19 | 2007-05-01 |  | 121d |  | Manav; Adopters | 216h |
| 342 | 2.3.3.4.1 | Developer update |  | 2d | 2007-04-19 | 2007-04-20 |  | 98d | 0d | Manav | 16h |
| 343 | 2.3.3.4.2 | Adopter review |  | 5d | 2007-04-23 | 2007-04-27 | 342 | 98d | 0d | Adopters | 40h |
| 344 | 2.3.3.4.3 | Developer update |  | 1d | 2007-04-30 | 2007-04-30 | 343 | 98d | 0d | Manav | 8h |
| 345 | 2.3.3.4.4 | Adopter sign-off |  | 1d | 2007-05-01 | 2007-05-01 | 344 | 98d |  | Adopters | 8h |
| 346 | 2.3.3.5 | **Update C3D integration requirements** |  | 9d | 2007-04-19 | 2007-05-01 |  | 121d |  | Manav; Adopters | 216h |
| 347 | 2.3.3.5.1 | Developer update |  | 2d | 2007-04-19 | 2007-04-20 |  | 98d | 0d | Manav | 16h |
| 348 | 2.3.3.5.2 | Adopter review |  | 5d | 2007-04-23 | 2007-04-27 | 347 | 98d | 0d | Adopters | 40h |
| 349 | 2.3.3.5.3 | Developer update |  | 1d | 2007-04-30 | 2007-04-30 | 348 | 98d | 0d | Manav | 8h |
| 350 | 2.3.3.5.4 | Adopter sign-off |  | 1d | 2007-05-01 | 2007-05-01 | 349 | 98d |  | Adopters | 8h |
| 351 | 2.3.4 | Developer deliver use case document to BAH (task 3.1.1, task 5.2.1) | milestone | 0d | 2007-05-01 | 2007-05-01 | 325 | 121d | 0d | Patrick |  |
| 352 | 2.3.5 | BAH review use case document (task 3.1.1, task 5.2.1) |  | 10d | 2007-05-02 | 2007-05-15 | 351 | 121d |  | BAH | 80h |
| 353 | 2.3.6 | Developer deliver requirements document to BAH (task 3.2.1, task 5.3.1) | milestone | 0d | 2007-05-01 | 2007-05-01 | 325 | 121d | 0d | Patrick |  |
| 354 | 2.3.7 | BAH review requirements document (task 3.2.1, task 5.3.1) |  | 10d | 2007-05-02 | 2007-05-15 | 353 | 121d |  | BAH | 80h |
| 355 | 2.4 | **Analysis and Design** |  | 31d | 2007-04-06 | 2007-05-18 | 283, 262 | 118d |  | Developers; Adopters; BAH | 4048h |
| 356 | 2.4.1 | **Perform level 1 design** |  | 4d | 2007-04-06 | 2007-04-11 |  | 118d | 0d | Developers | 64h |
| 357 | 2.4.1.1 | Cursory BRIDG harmonization |  | 1d | 2007-04-06 | 2007-04-06 |  | 95d | 0d | Developers | 8h |
| 358 | 2.4.1.2 | Update implementation model |  | 1d | 2007-04-09 | 2007-04-09 | 357 | 95d | 0d | Developers | 8h |
| 359 | 2.4.1.3 | Cursory system design |  | 2d | 2007-04-10 | 2007-04-11 | 358 | 95d |  | Developers | 16h |

| ID | WBS | Task | Type | Duration | Start | Finish | Predecessors | Total slack | Free slack | Resources | Work |
| --- | --- | --- | --- | --- | --- | --- | --- | --- | --- | --- | --- |
| 360 | 2.4.2 | **Modeling (task 3.3.1)** |  | 27d | 2007-04-12 | 2007-05-18 | 356 | 118d |  | Developers; Adopters | 1080h |
| 361 | 2.4.2.1 | **Update model** |  | 6d | 2007-04-12 | 2007-04-19 |  | 118d | 0d | Developers | 240h |
| 362 | 2.4.2.1.1 | **BRIDG harmonization** |  | 3d | 2007-04-12 | 2007-04-16 | 356 | 118d | 0d |  | 96h |
| 363 | 2.4.2.1.1.1 | Harmonize Study model |  | 2d | 2007-04-12 | 2007-04-13 |  | 96d |  | Kruttik; Priyatam; Manav | 48h |
| 364 | 2.4.2.1.1.2 | Harmonize Personnel model |  | 3d | 2007-04-12 | 2007-04-16 |  | 95d |  | Ramakrishna | 24h |
| 365 | 2.4.2.1.1.3 | Harmonize Multi-site Study model |  | 3d | 2007-04-12 | 2007-04-16 |  | 95d |  | Manav | 24h |
| 366 | 2.4.2.1.2 | **Model implementation** |  | 3d | 2007-04-17 | 2007-04-19 | 362 | 118d |  |  | 96h |
| 367 | 2.4.2.1.2.1 | Implement Study model |  | 2d | 2007-04-17 | 2007-04-18 |  | 96d |  | Kruttik; Priyatam; Manav | 48h |
| 368 | 2.4.2.1.2.2 | Implement Personnel model |  | 3d | 2007-04-17 | 2007-04-19 |  | 95d |  | Ramakrishna | 24h |
| 369 | 2.4.2.1.2.3 | Implement Multi-site Study model |  | 3d | 2007-04-17 | 2007-04-19 |  | 95d |  | Manav | 24h |
| 370 | 2.4.2.2 | Adopter review |  | 5d | 2007-04-20 | 2007-04-26 | 361 | 95d | 0d | Adopters | 40h |
| 371 | 2.4.2.3 | **Update model** |  | 6d | 2007-04-27 | 2007-05-04 | 370 | 118d | 0d | Developers | 288h |
| 372 | 2.4.2.3.1 | **BRIDG harmonization** |  | 3d | 2007-04-27 | 2007-05-01 | 370 | 118d | 0d |  | 120h |
| 373 | 2.4.2.3.1.1 | Harmonize Study model |  | 3d | 2007-04-27 | 2007-05-01 |  | 95d |  | Kruttik; Priyatam; Manav | 72h |
| 374 | 2.4.2.3.1.2 | Harmonize Personnel model |  | 3d | 2007-04-27 | 2007-05-01 |  | 95d |  | Ramakrishna | 24h |
| 375 | 2.4.2.3.1.3 | Harmonize Multi-site Study model |  | 3d | 2007-04-27 | 2007-05-01 |  | 95d | 0d | Manav | 24h |
| 376 | 2.4.2.3.2 | **Model implementation** |  | 3d | 2007-05-02 | 2007-05-04 | 372, 375 | 118d |  |  | 120h |
| 377 | 2.4.2.3.2.1 | Implement Study model |  | 3d | 2007-05-02 | 2007-05-04 |  | 95d |  | Kruttik; Priyatam; Manav | 72h |
| 378 | 2.4.2.3.2.2 | Implement Personnel model |  | 3d | 2007-05-02 | 2007-05-04 |  | 95d |  | Ramakrishna | 24h |
| 379 | 2.4.2.3.2.3 | Implement Multi-site Study model |  | 3d | 2007-05-02 | 2007-05-04 |  | 95d | 0d | Manav | 24h |
| 380 | 2.4.2.4 | Developer deliver UML to BAH (task 3.3.1) | milestone | 0d | 2007-05-04 | 2007-05-04 | 371, 379 | 95d | 0d | Patrick |  |
| 381 | 2.4.2.5 | BAH review of UML (task 3.3.1) |  | 10d | 2007-05-07 | 2007-05-18 | 380 | 95d |  | BAH | 80h |
| 382 | 2.4.3 | **System design (task 3.4.1)** |  | 25d | 2007-04-12 | 2007-05-16 | 356 | 120d |  | Developers; BAH | 2160h |
| 383 | 2.4.3.1 | **Design eligibility** |  | 15d | 2007-04-12 | 2007-05-02 |  | 120d | 0d | Kruttik; Priyatam | 480h |
| 384 | 2.4.3.1.1 | Draft UML |  | 5d | 2007-04-12 | 2007-04-18 |  | 97d | 0d | Kruttik; Priyatam | 80h |
| 385 | 2.4.3.1.2 | Team review |  | 5d | 2007-04-19 | 2007-04-25 | 384 | 97d | 0d | Kruttik; Priyatam | 80h |
| 386 | 2.4.3.1.3 | Update design document |  | 5d | 2007-04-26 | 2007-05-02 | 385 | 97d |  | Kruttik; Priyatam | 80h |

| ID | WBS | Task | Type | Duration | Start | Finish | Predecessors | Total slack | Free slack | Resources | Work |
| --- | --- | --- | --- | --- | --- | --- | --- | --- | --- | --- | --- |
| 387 | 2.4.3.2 | **Design personnel** |  | 15d | 2007-04-12 | 2007-05-02 |  | 120d | 0d | Priyatam; Kula | 480h |
| 388 | 2.4.3.2.1 | Draft UML |  | 5d | 2007-04-12 | 2007-04-18 |  | 97d | 0d | Priyatam; Kula | 80h |
| 389 | 2.4.3.2.2 | Team review |  | 5d | 2007-04-19 | 2007-04-25 | 388 | 97d | 0d | Priyatam; Kula | 80h |
| 390 | 2.4.3.2.3 | Update design document |  | 5d | 2007-04-26 | 2007-05-02 | 389 | 97d |  | Priyatam; Kula | 80h |
| 391 | 2.4.3.3 | **Design registration management** |  | 15d | 2007-04-12 | 2007-05-02 |  | 120d | 0d | Ramakrishna | 240h |
| 392 | 2.4.3.3.1 | Draft UML |  | 5d | 2007-04-12 | 2007-04-18 |  | 97d | 0d | Ramakrishna | 40h |
| 393 | 2.4.3.3.2 | Team review |  | 5d | 2007-04-19 | 2007-04-25 | 392 | 97d | 0d | Ramakrishna | 40h |
| 394 | 2.4.3.3.3 | Update design document |  | 5d | 2007-04-26 | 2007-05-02 | 393 | 97d |  | Ramakrishna | 40h |
| 395 | 2.4.3.4 | **Design multi-site study** |  | 15d | 2007-04-12 | 2007-05-02 |  | 120d | 0d | Manav | 240h |
| 396 | 2.4.3.4.1 | Draft UML |  | 5d | 2007-04-12 | 2007-04-18 |  | 97d | 0d | Manav | 40h |
| 397 | 2.4.3.4.2 | Team review |  | 5d | 2007-04-19 | 2007-04-25 | 396 | 97d | 0d | Manav | 40h |
| 398 | 2.4.3.4.3 | Update design document |  | 5d | 2007-04-26 | 2007-05-02 | 397 | 97d |  | Manav | 40h |
| 399 | 2.4.3.5 | **Design C3D integration** |  | 15d | 2007-04-12 | 2007-05-02 |  | 120d | 0d | Manav | 240h |
| 400 | 2.4.3.5.1 | Draft UML |  | 5d | 2007-04-12 | 2007-04-18 |  | 97d | 0d | Manav | 40h |
| 401 | 2.4.3.5.2 | Team review |  | 5d | 2007-04-19 | 2007-04-25 | 400 | 97d | 0d | Manav | 40h |
| 402 | 2.4.3.5.3 | Update design document |  | 5d | 2007-04-26 | 2007-05-02 | 401 | 97d |  | Manav | 40h |
| 403 | 2.4.3.6 | Deliver design doc to BAH (task 3.4.1) | milestone | 0d | 2007-05-02 | 2007-05-02 | 383, 387, 391, 395, 399 | 97d | 0d | Patrick |  |
| 404 | 2.4.3.7 | BAH review design doc (task 3.4.1) |  | 10d | 2007-05-03 | 2007-05-16 | 403 | 97d |  | BAH | 80h |
| 405 | 2.5 | **Implementation (task 3.5.1)** |  | 25d | 2007-04-12 | 2007-05-16 | 356, 262 | 119d |  | Developers; BAH | 2736h |
| 406 | 2.5.1 | **Database** |  | 3d | 2007-04-12 | 2007-04-16 |  | 119d | 0d | Developers | 216h |
| 407 | 2.5.1.1 | **Eligibility model** |  | 3d | 2007-04-12 | 2007-04-16 |  | 119d | 0d | Kruttik; Priyatam | 96h |
| 408 | 2.5.1.1.1 | Update DDLs |  | 1d | 2007-04-12 | 2007-04-12 |  | 96d | 0d | Kruttik; Priyatam | 16h |
| 409 | 2.5.1.1.2 | Apply to database |  | 1d | 2007-04-13 | 2007-04-13 | 408 | 96d | 0d | Kruttik; Priyatam | 16h |
| 410 | 2.5.1.1.3 | Create test data |  | 1d | 2007-04-16 | 2007-04-16 | 409 | 96d |  | Kruttik; Priyatam | 16h |

| ID | WBS | Task | Duration | Start | Finish | Predecessors | Total slack | Free slack | Resources | Work |
| --- | --- | --- | --- | --- | --- | --- | --- | --- | --- | --- |
| 411 | 2.5.1.2 | **Study personnel** | 3d | 2007-04-12 | 2007-04-16 |  | 120d | 0d | Ramakrishna | 48h |
| 412 | 2.5.1.2.1 | Update DDLs | 1d | 2007-04-12 | 2007-04-12 |  | 97d | 0d | Ramakrishna | 8h |
| 413 | 2.5.1.2.2 | Apply to database | 1d | 2007-04-13 | 2007-04-13 | 412 | 97d | 0d | Ramakrishna | 8h |
| 414 | 2.5.1.2.3 | Create test data | 1d | 2007-04-16 | 2007-04-16 | 413 | 97d |  | Ramakrishna | 8h |
| 415 | 2.5.1.3 | **Multi-site** | 3d | 2007-04-12 | 2007-04-16 |  | 120d | 0d | Manav | 48h |
| 416 | 2.5.1.3.1 | Update DDLs | 1d | 2007-04-12 | 2007-04-12 |  | 97d | 0d | Manav | 8h |
| 417 | 2.5.1.3.2 | Apply to database | 1d | 2007-04-13 | 2007-04-13 | 416 | 97d | 0d | Manav | 8h |
| 418 | 2.5.1.3.3 | Create test data | 1d | 2007-04-16 | 2007-04-16 | 417 | 97d |  | Manav | 8h |
| 419 | 2.5.2 | **Business layer** | 10d | 2007-04-17 | 2007-04-30 |  | 119d |  | Developers | 816h |
| 420 | 2.5.2.1 | **Implement eligibility APIs** | 7d | 2007-04-17 | 2007-04-25 | 407 | 119d | 0d | Kruttik; Priyatam | 224h |
| 421 | 2.5.2.1.1 | Update APIs | 2d | 2007-04-17 | 2007-04-18 |  | 96d | 0d | Kruttik; Priyatam | 32h |
| 422 | 2.5.2.1.2 | Implement APIs | 3d | 2007-04-19 | 2007-04-23 | 421 | 96d | 0d | Kruttik; Priyatam | 48h |
| 423 | 2.5.2.1.3 | Deploy APIs | 2d | 2007-04-24 | 2007-04-25 | 422 | 96d |  | Kruttik; Priyatam | 32h |
| 424 | 2.5.2.2 | **Implement study personnel APIs** | 6d | 2007-04-17 | 2007-04-24 | 411 | 120d | 0d | Ramakrishna | 96h |
| 425 | 2.5.2.2.1 | Update APIs | 2d | 2007-04-17 | 2007-04-18 |  | 97d | 0d | Ramakrishna | 16h |
| 426 | 2.5.2.2.2 | Implement APIs | 3d | 2007-04-19 | 2007-04-23 | 425 | 97d | 0d | Ramakrishna | 24h |
| 427 | 2.5.2.2.3 | Deploy APIs | 1d | 2007-04-24 | 2007-04-24 | 426 | 97d |  | Ramakrishna | 8h |
| 428 | 2.5.2.3 | **Implement C3PR registration APIs** | 6d | 2007-04-17 | 2007-04-24 | 415 | 120d | 0d | Manav | 96h |
| 429 | 2.5.2.3.1 | Update APIs | 2d | 2007-04-17 | 2007-04-18 |  | 97d | 0d | Manav | 16h |
| 430 | 2.5.2.3.2 | Implement APIs | 3d | 2007-04-19 | 2007-04-23 | 429 | 97d | 0d | Manav | 24h |
| 431 | 2.5.2.3.3 | Deploy APIs | 1d | 2007-04-24 | 2007-04-24 | 430 | 97d |  | Manav | 8h |
| 432 | 2.5.2.4 | **Implement import eligibility** | 10d | 2007-04-17 | 2007-04-30 | 407 | 132d |  | Kruttik; Priyatam | 320h |
| 433 | 2.5.2.4.1 | Import eligibility from a file | 5d | 2007-04-17 | 2007-04-23 |  | 109d | 0d | Kruttik; Priyatam | 80h |
| 434 | 2.5.2.4.2 | Import eligibility from the caDSR | 5d | 2007-04-24 | 2007-04-30 | 433 | 109d |  | Kruttik; Priyatam | 80h |

| ID | WBS | Task | Type | Duration | Start | Finish | Predecessors | Total slack | Free slack | Resources | Work |
| --- | --- | --- | --- | --- | --- | --- | --- | --- | --- | --- | --- |
| 435 | 2.5.3 | **ESB** |  | 5d | 2007-04-17 | 2007-04-23 | 406 | 137d |  | Manav | 80h |
| 436 | 2.5.3.1 | Implement binding components for C3D |  | 5d | 2007-04-17 | 2007-04-23 |  | 114d |  | Manav | 40h |
| 437 | 2.5.4 | **Security** |  | 5d | 2007-04-12 | 2007-04-18 |  | 140d |  | Ramakrishna; Manav | 240h |
| 438 | 2.5.4.1 | Connect C3PR roles to GridGrouper groups |  | 5d | 2007-04-12 | 2007-04-18 |  | 117d |  | Ramakrishna; Manav | 80h |
| 439 | 2.5.4.2 | Hook groups into authorization |  | 5d | 2007-04-12 | 2007-04-18 |  | 117d |  | Ramakrishna; Manav | 80h |
| 440 | 2.5.5 | **Web interface** |  | 15d | 2007-04-12 | 2007-05-02 |  | 119d | 0d | Developers | 904h |
| 441 | 2.5.5.1 | **Modify study management interface** |  | 6d | 2007-04-25 | 2007-05-02 |  | 119d |  | Kruttik; Priyatam; Manav | 384h |
| 442 | 2.5.5.1.1 | Manage eligibility criteria |  | 5d | 2007-04-26 | 2007-05-02 | 420 | 96d |  | Kruttik; Priyatam; Manav | 120h |
| 443 | 2.5.5.1.2 | Manage multi-site study |  | 5d | 2007-04-25 | 2007-05-01 | 428 | 97d |  | Kruttik; Priyatam; Manav | 120h |
| 444 | 2.5.5.2 | **Modify study personnel management interface** |  | 5d | 2007-04-25 | 2007-05-01 |  | 120d |  | Priyatam; Kula | 160h |
| 445 | 2.5.5.2.1 | Manage study personnel |  | 5d | 2007-04-25 | 2007-05-01 | 424 | 97d |  | Priyatam; Kula | 80h |
| 446 | 2.5.5.3 | **Modify registration interface** |  | 5d | 2007-04-26 | 2007-05-02 |  | 119d |  | Kruttik; Priyatam | 160h |
| 447 | 2.5.5.3.1 | Check eligibility |  | 5d | 2007-04-26 | 2007-05-02 | 420 | 96d | 0d | Kruttik; Priyatam | 80h |
| 448 | 2.5.5.4 | **Modify registration management interface** |  | 5d | 2007-04-12 | 2007-04-18 |  | 129d |  | Ramakrishna | 80h |
| 449 | 2.5.5.4.1 | Manage study subject registration |  | 5d | 2007-04-12 | 2007-04-18 |  | 106d |  | Ramakrishna | 40h |
| 450 | 2.5.6 | Deliver codebase to BAH (task 3.5.1) | milestone | 0d | 2007-05-02 | 2007-05-02 | 406, 440, 447 | 96d | 0d | Patrick |  |
| 451 | 2.5.7 | BAH review codebase (task 3.5.1) |  | 10d | 2007-05-03 | 2007-05-16 | 450 | 97d |  | BAH | 80h |
| 452 | 2.6 | **Testing** |  | 34d | 2007-04-02 | 2007-05-17 | 262 | 119d |  | Developers; Adopters; BAH | 5272h |
| 453 | 2.6.1 | **Developer testing** |  | 34d | 2007-04-02 | 2007-05-17 |  | 119d |  | BAH; Adopters; Developers | 2160h |
| 454 | 2.6.1.1 | **Update developer test plan (task 3.6.1, task 5.4.1)** |  | 30d | 2007-04-02 | 2007-05-11 |  | 123d |  | Developers; Adopters; BAH | 960h |
| 455 | 2.6.1.1.1 | Developer draft |  | 5d | 2007-04-02 | 2007-04-06 |  | 100d | 0d | Developers | 40h |
| 456 | 2.6.1.1.2 | Adopter review |  | 5d | 2007-04-09 | 2007-04-13 | 455 | 100d | 0d | Adopters | 40h |
| 457 | 2.6.1.1.3 | Developer update |  | 5d | 2007-04-16 | 2007-04-20 | 456 | 100d | 0d | Developers | 40h |
| 458 | 2.6.1.1.4 | Adopter review and sign |  | 5d | 2007-04-23 | 2007-04-27 | 457 | 100d | 0d | Adopters | 40h |
| 459 | 2.6.1.1.5 | Deliver signed test plan to BAH (task 3.6.1, task 5.4.1) | milestone | 0d | 2007-04-27 | 2007-04-27 | 458 | 100d | 0d | Patrick |  |
| 460 | 2.6.1.1.6 | BAH review signed test plan (task 3.6.1, task 5.4.1) |  | 10d | 2007-04-30 | 2007-05-11 | 459 | 100d |  | BAH | 80h |

| ID | WBS | Task | Type | Duration | Start | Finish | Predecessors | Total slack | Free slack | Resources | Work |
| --- | --- | --- | --- | --- | --- | --- | --- | --- | --- | --- | --- |
| 461 | 2.6.1.2 | **Integration and system testing (task 3.8.1)** |  | 16d | 2007-04-26 | 2007-05-17 | 450FS-5d | 119d |  | Developers; BAH | 384h |
| 462 | 2.6.1.2.1 | Generate test data |  | 1d | 2007-04-26 | 2007-04-26 |  | 96d | 0d | Developers | 8h |
| 463 | 2.6.1.2.2 | Write tests |  | 3d | 2007-04-27 | 2007-05-01 | 462 | 96d | 0d | Developers | 24h |
| 464 | 2.6.1.2.3 | Validate tests |  | 1d | 2007-05-02 | 2007-05-02 | 463 | 96d | 0d | Developers | 8h |
| 465 | 2.6.1.2.4 | Generate test report |  | 1d | 2007-05-03 | 2007-05-03 | 464 | 96d | 0d | Developers | 8h |
| 466 | 2.6.1.2.5 | Deliver test report to BAH (task 3.8.1) | milestone | 0d | 2007-05-03 | 2007-05-03 | 465 | 96d | 0d | Patrick |  |
| 467 | 2.6.1.2.6 | BAH review test report (task 3.8.1) |  | 10d | 2007-05-04 | 2007-05-17 | 466 | 96d |  | BAH | 80h |
| 468 | 2.6.2 | **Adopter testing** |  | 30d | 2007-04-02 | 2007-05-11 |  | 123d |  | Adopters; Developers; BAH | 2296h |
| 469 | 2.6.2.1 | **Update adopter test plan (task 5.5.1)** |  | 30d | 2007-04-02 | 2007-05-11 |  | 123d |  | Adopters; Developers; BAH | 1000h |
| 470 | 2.6.2.1.1 | Adopter update test script |  | 5d | 2007-04-02 | 2007-04-06 |  | 100d | 0d | Adopters | 40h |
| 471 | 2.6.2.1.2 | Adopter update test approach |  | 5d | 2007-04-09 | 2007-04-13 | 470 | 100d | 0d | Adopters | 40h |
| 472 | 2.6.2.1.3 | Developer review |  | 5d | 2007-04-16 | 2007-04-20 | 471 | 100d | 0d | Patrick; Ram | 80h |
| 473 | 2.6.2.1.4 | Adopter update |  | 5d | 2007-04-23 | 2007-04-27 | 472 | 100d | 0d | Adopters | 40h |
| 474 | 2.6.2.1.5 | Developer deliver adopter test plan to BAH (task 5.5.1) | milestone | 0d | 2007-04-27 | 2007-04-27 | 473 | 100d | 0d | Patrick |  |
| 475 | 2.6.2.1.6 | BAH review adopter test plan (task 5.5.1) |  | 10d | 2007-04-30 | 2007-05-11 | 474 | 100d |  | BAH | 80h |
| 476 | 2.6.2.2 | **QA testing (task 5.6.1)** |  | 24d | 2007-04-09 | 2007-05-10 | 470 | 124d |  | Adopters; BAH | 576h |
| 477 | 2.6.2.2.1 | Adopter create test data |  | 5d | 2007-04-09 | 2007-04-13 |  | 101d | 0d | Adopters | 40h |
| 478 | 2.6.2.2.2 | Adopter perform test script |  | 5d | 2007-04-16 | 2007-04-20 | 477 | 101d | 0d | Adopters | 40h |
| 479 | 2.6.2.2.3 | Adopter document results |  | 2d | 2007-04-23 | 2007-04-24 | 478 | 101d | 0d | Adopters | 16h |
| 480 | 2.6.2.2.4 | Adopter log bugs |  | 2d | 2007-04-25 | 2007-04-26 | 479 | 101d | 0d | Adopters | 16h |
| 481 | 2.6.2.2.5 | Developer deliver adopter test report to BAH (task 5.6.1) | milestone | 0d | 2007-04-26 | 2007-04-26 | 479, 480 | 101d | 0d | Patrick |  |
| 482 | 2.6.2.2.6 | BAH review adopter test report (task 5.6.1) |  | 10d | 2007-04-27 | 2007-05-10 | 481 | 101d |  | BAH | 80h |
| 483 | 2.7 | **Documentation** |  | 15d | 2007-04-26 | 2007-05-16 | 262 | 120d |  | Developers; Adopters; BAH | 1656h |
| 484 | 2.7.1 | **Installation guide (task 3.10.1)** |  | 13d | 2007-04-30 | 2007-05-16 | 450FS-3d | 120d |  | Developers; BAH | 312h |
| 485 | 2.7.1.1 | Update installation guide |  | 3d | 2007-04-30 | 2007-05-02 |  | 97d | 0d | Developers | 24h |
| 486 | 2.7.1.2 | Deliver installation guide to BAH (task 3.10.1) | milestone | 0d | 2007-05-02 | 2007-05-02 | 485 | 97d | 0d | Patrick |  |
| 487 | 2.7.1.3 | BAH review of installation guide (task 3.10.1) |  | 10d | 2007-05-03 | 2007-05-16 | 486 | 97d |  | BAH | 80h |

| ID | WBS | Task | Type | Duration | Start | Finish | Predecessors | Total slack | Free slack | Constraint | Resources | Work |
| --- | --- | --- | --- | --- | --- | --- | --- | --- | --- | --- | --- | --- |
| 488 | 2.7.2 | **Administration guide (task 3.13.1)** |  | 13d | 2007-04-30 | 2007-05-16 | 450FS-3d | 120d |  |  | Developers; BAH | 312h |
| 489 | 2.7.2.1 | Update administration guide |  | 3d | 2007-04-30 | 2007-05-02 |  | 97d | 0d |  | Developers | 24h |
| 490 | 2.7.2.2 | Deliver administration guide to BAH (task 3.13.1) | milestone | 0d | 2007-05-02 | 2007-05-02 | 489 | 97d | 0d |  | Patrick |  |
| 491 | 2.7.2.3 | BAH review of administration guide (task 3.13.1) |  | 10d | 2007-05-03 | 2007-05-16 | 490 | 97d |  |  | BAH | 80h |
| 492 | 2.7.3 | **Release notes (task 3.14.1)** |  | 13d | 2007-04-30 | 2007-05-16 | 450FS-3d | 120d |  |  | Developers; BAH | 312h |
| 493 | 2.7.3.1 | Update release notes |  | 3d | 2007-04-30 | 2007-05-02 |  | 97d | 0d |  | Developers | 24h |
| 494 | 2.7.3.2 | Deliver release notes to BAH (task 3.14.1) | milestone | 0d | 2007-05-02 | 2007-05-02 | 493 | 97d | 0d |  | Patrick |  |
| 495 | 2.7.3.3 | BAH review of release notes (task 3.14.1) |  | 10d | 2007-05-03 | 2007-05-16 | 494 | 97d |  |  | BAH | 80h |
| 496 | 2.7.4 | **Adopter summary of C3PR (task 5.1.1)** |  | 15d | 2007-04-26 | 2007-05-16 | 450FS-5d | 120d |  |  | Adopters; BAH | 360h |
| 497 | 2.7.4.1 | Adopter update summary |  | 3d | 2007-04-26 | 2007-04-30 |  | 97d | 0d |  | Adopters | 24h |
| 498 | 2.7.4.2 | Developer review summary |  | 1d | 2007-05-01 | 2007-05-01 | 497 | 97d | 0d |  | Adopters | 8h |
| 499 | 2.7.4.3 | Adopter update summary |  | 1d | 2007-05-02 | 2007-05-02 | 498 | 97d | 0d |  | Adopters | 8h |
| 500 | 2.7.4.4 | Developer deliver C3PR summary to BAH (task 5.1.1) | milestone | 0d | 2007-05-02 | 2007-05-02 | 499 | 97d | 0d |  | Patrick |  |
| 501 | 2.7.4.5 | BAH review of C3PR summary (task 5.1.1) |  | 10d | 2007-05-03 | 2007-05-16 | 500 | 97d |  |  | BAH | 80h |
| 502 | 3 | **Iteration 3 (stratification, security, enrollment. multi-site study, study ammendments)** |  | 22d | 2007-05-02 | 2007-05-31 |  | 109d |  |  |  |  |
| 503 | 3.1 | Iteration start | milestone | 0d | 2007-05-02 | 2007-05-02 |  | 109d | 0d | start no earlier than 2007-05-02 |  |  |
| 504 | 3.2 | **Project management** |  | 22d | 2007-05-02 | 2007-05-31 | 503 | 109d |  |  |  |  |
| 505 | 3.2.1 | Update project plan |  | 22d | 2007-05-02 | 2007-05-31 |  | 109d |  |  |  |  |
| 506 | 3.2.2 | Update risk matrix |  | 22d | 2007-05-02 | 2007-05-31 |  | 109d |  |  |  |  |
| 507 | 3.2.3 | Monthly report |  | 22d | 2007-05-02 | 2007-05-31 |  | 109d |  |  |  |  |
| 508 | 3.3 | **Requirements and use cases** |  | 22d | 2007-05-02 | 2007-05-31 | 503 | 109d |  |  |  |  |
| 509 | 3.3.1 | Create level 1 use cases and requirements |  | 22d | 2007-05-02 | 2007-05-31 |  | 109d |  |  |  |  |
| 510 | 3.3.2 | Update use case document |  | 22d | 2007-05-02 | 2007-05-31 |  | 109d |  |  |  |  |
| 511 | 3.3.3 | Update requirements document |  | 22d | 2007-05-02 | 2007-05-31 |  | 109d |  |  |  |  |

| ID | WBS | Task | Duration | Start | Finish | Predecessors | Total slack |
| --- | --- | --- | --- | --- | --- | --- | --- |
| 512 | 3.4 | **Analysis and Design** | 22d | 2007-05-02 | 2007-05-31 | 503 | 109d |
| 513 | 3.4.1 | Perform level 1 design | 22d | 2007-05-02 | 2007-05-31 |  | 109d |
| 514 | 3.4.2 | Modeling | 22d | 2007-05-02 | 2007-05-31 |  | 109d |
| 515 | 3.4.3 | Systems design | 22d | 2007-05-02 | 2007-05-31 |  | 109d |
| 516 | 3.5 | **Implementation** | 22d | 2007-05-02 | 2007-05-31 | 503 | 109d |
| 517 | 3.5.1 | **Stratification** | 22d | 2007-05-02 | 2007-05-31 |  | 109d |
| 518 | 3.5.1.1 | First pass at stratification implementation | 22d | 2007-05-02 | 2007-05-31 |  | 109d |
| 519 | 3.5.2 | **Security** | 22d | 2007-05-02 | 2007-05-31 |  | 109d |
| 520 | 3.5.2.1 | Complete security implementation | 22d | 2007-05-02 | 2007-05-31 |  | 109d |
| 521 | 3.5.3 | **Enrollment** | 22d | 2007-05-02 | 2007-05-31 |  | 109d |
| 522 | 3.5.3.1 | **Enrollment details** | 22d | 2007-05-02 | 2007-05-31 |  | 109d |
| 523 | 3.5.3.1.1 | Treating MD | 22d | 2007-05-02 | 2007-05-31 |  | 109d |
| 524 | 3.5.3.1.2 | Disease | 22d | 2007-05-02 | 2007-05-31 |  | 109d |
| 525 | 3.5.3.1.3 | Compassionate | 22d | 2007-05-02 | 2007-05-31 |  | 109d |
| 526 | 3.5.3.2 | **Enrollment business rules** | 22d | 2007-05-02 | 2007-05-31 |  | 109d |
| 527 | 3.5.3.2.1 | Accrual ceilings | 22d | 2007-05-02 | 2007-05-31 |  | 109d |
| 528 | 3.5.3.2.2 | Notifications | 22d | 2007-05-02 | 2007-05-31 |  | 109d |
| 529 | 3.5.4 | **Multi-site study** | 22d | 2007-05-02 | 2007-05-31 |  | 109d |
| 530 | 3.5.4.1 | Complete multi-site study implementation | 22d | 2007-05-02 | 2007-05-31 |  | 109d |
| 531 | 3.5.5 | **Registration management** | 22d | 2007-05-02 | 2007-05-31 |  | 109d |
| 532 | 3.5.5.1 | Off study | 22d | 2007-05-02 | 2007-05-31 |  | 109d |
| 533 | 3.5.6 | **Study ammendments** | 22d | 2007-05-02 | 2007-05-31 |  | 109d |
| 534 | 3.5.6.1 | Change model, harmonize | 22d | 2007-05-02 | 2007-05-31 |  | 109d |
| 535 | 3.5.6.2 | Implement business rules | 22d | 2007-05-02 | 2007-05-31 |  | 109d |

| ID | WBS | Task | Duration | Start | Finish | Predecessors | Total slack |
| --- | --- | --- | --- | --- | --- | --- | --- |
| 536 | 3.6 | **Testing** | 22d | 2007-05-02 | 2007-05-31 | 503 | 109d |
| 537 | 3.6.1 | Developer testing | 22d | 2007-05-02 | 2007-05-31 |  | 109d |
| 538 | 3.6.2 | Adopter testing | 22d | 2007-05-02 | 2007-05-31 |  | 109d |
| 539 | 3.7 | **Documentation** | 22d | 2007-05-02 | 2007-05-31 | 503 | 109d |
| 540 | 3.7.1 | Installation guide | 22d | 2007-05-02 | 2007-05-31 |  | 109d |
| 541 | 3.7.2 | Administration guide | 22d | 2007-05-02 | 2007-05-31 |  | 109d |
| 542 | 3.7.3 | Release notes | 22d | 2007-05-02 | 2007-05-31 |  | 109d |
| 543 | 3.7.4 | Adopter summary of C3PR | 22d | 2007-05-02 | 2007-05-31 |  | 109d |
| 544 | 3.8 | **Support** | 22d | 2007-05-02 | 2007-05-31 | 503 | 109d |
| 545 | 3.8.1 | Adopter support | 22d | 2007-05-02 | 2007-05-31 |  | 109d |
| 546 | 3.8.2 | Bug fixing | 22d | 2007-05-02 | 2007-05-31 |  | 109d |
| 547 | 3.9 | **Touchpoints** | 22d | 2007-05-02 | 2007-05-31 | 503 | 109d |
| 548 | 3.9.1 | Adopter review of deliverables | 22d | 2007-05-02 | 2007-05-31 |  | 109d |
| 549 | 3.9.2 | Adopter deployment of previous iteration codebase | 22d | 2007-05-02 | 2007-05-31 |  | 109d |
| 550 | 3.9.3 | Contact mentors to review deliverables | 22d | 2007-05-02 | 2007-05-31 |  | 109d |
| 551 | 3.10 | **Deliverables** | 22d | 2007-05-02 | 2007-05-31 | 503 | 109d |
| 552 | 3.10.1 | Risk matrix 1.3.x | 22d | 2007-05-02 | 2007-05-31 |  | 109d |
| 553 | 3.10.2 | Monthly report and risk matrix 1.4.x | 22d | 2007-05-02 | 2007-05-31 |  | 109d |
| 554 | 3.10.3 | Use case document (3.1.x) | 22d | 2007-05-02 | 2007-05-31 |  | 109d |
| 555 | 3.10.4 | Requirements document (3.2.x) | 22d | 2007-05-02 | 2007-05-31 |  | 109d |
| 556 | 3.10.5 | UML (3.3.x) | 22d | 2007-05-02 | 2007-05-31 |  | 109d |
| 557 | 3.10.6 | Design document (3.4.x) | 22d | 2007-05-02 | 2007-05-31 |  | 109d |
| 558 | 3.10.7 | Codebase (3.5.x) | 22d | 2007-05-02 | 2007-05-31 |  | 109d |
| 559 | 3.10.8 | Test plan (3.6.x, 5.4.x) | 22d | 2007-05-02 | 2007-05-31 |  | 109d |
| 560 | 3.10.9 | Test report (3.8.x) | 22d | 2007-05-02 | 2007-05-31 |  | 109d |
| 561 | 3.10.10 | Adopter test plan (5.5.x) | 22d | 2007-05-02 | 2007-05-31 |  | 109d |
| 562 | 3.10.11 | Adopter test report (5.6.x) | 22d | 2007-05-02 | 2007-05-31 |  | 109d |
| 563 | 3.10.12 | Installation guide (3.10.x) | 22d | 2007-05-02 | 2007-05-31 |  | 109d |
| 564 | 3.10.13 | Administration guide (3.13.x) | 22d | 2007-05-02 | 2007-05-31 |  | 109d |
| 565 | 3.10.14 | Release notes (3.14.x) | 22d | 2007-05-02 | 2007-05-31 |  | 109d |
| 566 | 3.10.15 | Adopter summary of C3PR (5.1.x) | 22d | 2007-05-02 | 2007-05-31 |  | 109d |

| ID | WBS | Task | Type | Duration | Start | Finish | Predecessors | Total slack | Free slack | Constraint |
| --- | --- | --- | --- | --- | --- | --- | --- | --- | --- | --- |
| 567 | 4 | **Iteration 4 (stratification, enrollment, randomization, reporting, legacy systems)** |  | 21d | 2007-06-01 | 2007-06-29 |  | 88d |  |  |
| 568 | 4.1 | Iteration start | milestone | 0d | 2007-06-01 | 2007-06-01 |  | 88d | 0d | start no earlier than 2007-06-01 |
| 569 | 4.2 | **Project management** |  | 21d | 2007-06-01 | 2007-06-29 | 568 | 88d |  |  |
| 570 | 4.2.1 | Update project plan |  | 21d | 2007-06-01 | 2007-06-29 |  | 88d |  |  |
| 571 | 4.2.2 | Update risk matrix |  | 21d | 2007-06-01 | 2007-06-29 |  | 88d |  |  |
| 572 | 4.2.3 | Monthly report |  | 21d | 2007-06-01 | 2007-06-29 |  | 88d |  |  |
| 573 | 4.3 | **Requirements and use cases** |  | 21d | 2007-06-01 | 2007-06-29 | 568 | 88d |  |  |
| 574 | 4.3.1 | Create level 1 use cases and requirements |  | 21d | 2007-06-01 | 2007-06-29 |  | 88d |  |  |
| 575 | 4.3.2 | Update use case document |  | 21d | 2007-06-01 | 2007-06-29 |  | 88d |  |  |
| 576 | 4.3.3 | Update requirements document |  | 21d | 2007-06-01 | 2007-06-29 |  | 88d |  |  |
| 577 | 4.4 | **Analysis and Design** |  | 21d | 2007-06-01 | 2007-06-29 | 568 | 88d |  |  |
| 578 | 4.4.1 | Perform level 1 design |  | 21d | 2007-06-01 | 2007-06-29 |  | 88d |  |  |
| 579 | 4.4.2 | Modeling |  | 21d | 2007-06-01 | 2007-06-29 |  | 88d |  |  |
| 580 | 4.4.3 | Systems design |  | 21d | 2007-06-01 | 2007-06-29 |  | 88d |  |  |
| 581 | 4.5 | **Implementation** |  | 21d | 2007-06-01 | 2007-06-29 | 568 | 88d |  |  |
| 582 | 4.5.1 | **Stratification** |  | 21d | 2007-06-01 | 2007-06-29 |  | 88d |  |  |
| 583 | 4.5.1.1 | Finalize stratification implementation |  | 21d | 2007-06-01 | 2007-06-29 |  | 88d |  |  |
| 584 | 4.5.2 | **Enrollment** |  | 21d | 2007-06-01 | 2007-06-29 |  | 88d |  |  |
| 585 | 4.5.2.1 | **Enrollment details** |  | 21d | 2007-06-01 | 2007-06-29 |  | 88d |  |  |
| 586 | 4.5.2.1.1 | Finalize enrollment details |  | 21d | 2007-06-01 | 2007-06-29 |  | 88d |  |  |
| 587 | 4.5.2.2 | **Enrollment business rules** |  | 21d | 2007-06-01 | 2007-06-29 |  | 88d |  |  |
| 588 | 4.5.2.2.1 | Finalize enrollment business rules |  | 21d | 2007-06-01 | 2007-06-29 |  | 88d |  |  |
| 589 | 4.5.3 | **Randomization** |  | 21d | 2007-06-01 | 2007-06-29 |  | 88d |  |  |
| 590 | 4.5.3.1 | Begin interfacing with Randomization Hub |  | 21d | 2007-06-01 | 2007-06-29 |  | 88d |  |  |
| 591 | 4.5.3.2 | Randomization book |  | 21d | 2007-06-01 | 2007-06-29 |  | 88d |  |  |

| ID | WBS | Task | Duration | Start | Finish | Predecessors | Total slack |
| --- | --- | --- | --- | --- | --- | --- | --- |
| 592 | 4.5.4 | **Reporting** | 21d | 2007-06-01 | 2007-06-29 |  | 88d |
| 593 | 4.5.4.1 | Reporting interface | 21d | 2007-06-01 | 2007-06-29 |  | 88d |
| 594 | 4.5.5 | **Legacy systems** | 21d | 2007-06-01 | 2007-06-29 |  | 88d |
| 595 | 4.5.5.1 | Investigate legacy systems at Adopter sites | 21d | 2007-06-01 | 2007-06-29 |  | 88d |
| 596 | 4.5.5.2 | Investigate support of legacy systems (APIs, files, etc.) | 21d | 2007-06-01 | 2007-06-29 |  | 88d |
| 597 | 4.6 | **Testing** | 21d | 2007-06-01 | 2007-06-29 | 568 | 88d |
| 598 | 4.6.1 | Developer testing | 21d | 2007-06-01 | 2007-06-29 |  | 88d |
| 599 | 4.6.2 | Adopter testing | 21d | 2007-06-01 | 2007-06-29 |  | 88d |
| 600 | 4.7 | **Documentation** | 21d | 2007-06-01 | 2007-06-29 | 568 | 88d |
| 601 | 4.7.1 | Installation guide | 21d | 2007-06-01 | 2007-06-29 |  | 88d |
| 602 | 4.7.2 | Administration guide | 21d | 2007-06-01 | 2007-06-29 |  | 88d |
| 603 | 4.7.3 | Release notes | 21d | 2007-06-01 | 2007-06-29 |  | 88d |
| 604 | 4.7.4 | Adopter summary of C3PR | 21d | 2007-06-01 | 2007-06-29 |  | 88d |
| 605 | 4.8 | **Support** | 21d | 2007-06-01 | 2007-06-29 | 568 | 88d |
| 606 | 4.8.1 | Adopter support | 21d | 2007-06-01 | 2007-06-29 |  | 88d |
| 607 | 4.8.2 | Bug fixing | 21d | 2007-06-01 | 2007-06-29 |  | 88d |
| 608 | 4.9 | **Touchpoints** | 21d | 2007-06-01 | 2007-06-29 | 568 | 88d |
| 609 | 4.9.1 | Adopter review of deliverables | 21d | 2007-06-01 | 2007-06-29 |  | 88d |
| 610 | 4.9.2 | Adopter deployment of previous iteration codebase | 21d | 2007-06-01 | 2007-06-29 |  | 88d |
| 611 | 4.9.3 | Complete mentor review of deliverables | 21d | 2007-06-01 | 2007-06-29 |  | 88d |
| 612 | 4.10 | **Deliverables** | 21d | 2007-06-01 | 2007-06-29 | 568 | 88d |
| 613 | 4.10.1 | Risk matrix 1.3.x | 21d | 2007-06-01 | 2007-06-29 |  | 88d |
| 614 | 4.10.2 | Monthly report and risk matrix 1.4.x | 21d | 2007-06-01 | 2007-06-29 |  | 88d |
| 615 | 4.10.3 | Use case document (3.1.x) | 21d | 2007-06-01 | 2007-06-29 |  | 88d |
| 616 | 4.10.4 | Requirements document (3.2.x) | 21d | 2007-06-01 | 2007-06-29 |  | 88d |
| 617 | 4.10.5 | UML (3.3.x) | 21d | 2007-06-01 | 2007-06-29 |  | 88d |
| 618 | 4.10.6 | Design document (3.4.x) | 21d | 2007-06-01 | 2007-06-29 |  | 88d |
| 619 | 4.10.7 | Codebase (3.5.x) | 21d | 2007-06-01 | 2007-06-29 |  | 88d |
| 620 | 4.10.8 | Test plan (3.6.x, 5.4.x) | 21d | 2007-06-01 | 2007-06-29 |  | 88d |
| 621 | 4.10.9 | Test report (3.8.x) | 21d | 2007-06-01 | 2007-06-29 |  | 88d |
| 622 | 4.10.10 | Adopter test plan (5.5.x) | 21d | 2007-06-01 | 2007-06-29 |  | 88d |
| 623 | 4.10.11 | Adopter test report (5.6.x) | 21d | 2007-06-01 | 2007-06-29 |  | 88d |
| 624 | 4.10.12 | Installation guide (3.10.x) | 21d | 2007-06-01 | 2007-06-29 |  | 88d |
| 625 | 4.10.13 | Administration guide (3.13.x) | 21d | 2007-06-01 | 2007-06-29 |  | 88d |
| 626 | 4.10.14 | Release notes (3.14.x) | 21d | 2007-06-01 | 2007-06-29 |  | 88d |
| 627 | 4.10.15 | Adopter summary of C3PR (5.1.x) | 21d | 2007-06-01 | 2007-06-29 |  | 88d |

| ID | WBS | Task | Type | Duration | Start | Finish | Predecessors | Total slack | Free slack | Constraint |
| --- | --- | --- | --- | --- | --- | --- | --- | --- | --- | --- |
| 628 | 5 | **Iteration 5 (randomization, reporting, legacy systems, semantic integration, BRIDG)** |  | 22d | 2007-07-02 | 2007-07-31 |  | 66d |  |  |
| 629 | 5.1 | Iteration start | milestone | 0d | 2007-07-02 | 2007-07-02 |  | 66d | 0d | start no earlier than 2007-07-02 |
| 630 | 5.2 | **Project management** |  | 22d | 2007-07-02 | 2007-07-31 | 629 | 66d |  |  |
| 631 | 5.2.1 | Update project plan |  | 22d | 2007-07-02 | 2007-07-31 |  | 66d |  |  |
| 632 | 5.2.2 | Update risk matrix |  | 22d | 2007-07-02 | 2007-07-31 |  | 66d |  |  |
| 633 | 5.2.3 | Monthly report |  | 22d | 2007-07-02 | 2007-07-31 |  | 66d |  |  |
| 634 | 5.3 | **Requirements and use cases** |  | 22d | 2007-07-02 | 2007-07-31 | 629 | 66d |  |  |
| 635 | 5.3.1 | Create level 1 use cases and requirements |  | 22d | 2007-07-02 | 2007-07-31 |  | 66d |  |  |
| 636 | 5.3.2 | Update use case document |  | 22d | 2007-07-02 | 2007-07-31 |  | 66d |  |  |
| 637 | 5.3.3 | Update requirements document |  | 22d | 2007-07-02 | 2007-07-31 |  | 66d |  |  |
| 638 | 5.4 | **Analysis and Design** |  | 22d | 2007-07-02 | 2007-07-31 | 629 | 66d |  |  |
| 639 | 5.4.1 | Perform level 1 design |  | 22d | 2007-07-02 | 2007-07-31 |  | 66d |  |  |
| 640 | 5.4.2 | Modeling |  | 22d | 2007-07-02 | 2007-07-31 |  | 66d |  |  |
| 641 | 5.4.3 | Systems design |  | 22d | 2007-07-02 | 2007-07-31 |  | 66d |  |  |
| 642 | 5.5 | **Implementation** |  | 22d | 2007-07-02 | 2007-07-31 |  | 66d |  |  |
| 643 | 5.5.1 | **Randomization** |  | 22d | 2007-07-02 | 2007-07-31 | 629 | 66d |  |  |
| 644 | 5.5.1.1 | Randomization email |  | 22d | 2007-07-02 | 2007-07-31 |  | 66d |  |  |
| 645 | 5.5.2 | **Reporting** |  | 22d | 2007-07-02 | 2007-07-31 | 629 | 66d |  |  |
| 646 | 5.5.2.1 | Storing reports |  | 22d | 2007-07-02 | 2007-07-31 |  | 66d |  |  |
| 647 | 5.5.3 | **Legacy systems** |  | 22d | 2007-07-02 | 2007-07-31 | 629 | 66d |  |  |
| 648 | 5.5.3.1 | Implement legacy support for adopters |  | 22d | 2007-07-02 | 2007-07-31 |  | 66d |  |  |
| 649 | 5.5.3.2 | Implement generic support for legacy systems |  | 22d | 2007-07-02 | 2007-07-31 |  | 66d |  |  |
| 650 | 5.6 | **Testing** |  | 22d | 2007-07-02 | 2007-07-31 | 629 | 66d |  |  |
| 651 | 5.6.1 | Developer testing |  | 22d | 2007-07-02 | 2007-07-31 |  | 66d |  |  |
| 652 | 5.6.2 | Adopter testing |  | 22d | 2007-07-02 | 2007-07-31 |  | 66d |  |  |

| ID | WBS | Task | Duration | Start | Finish | Predecessors | Total slack |
| --- | --- | --- | --- | --- | --- | --- | --- |
| 653 | 5.7 | **Documentation** | 22d | 2007-07-02 | 2007-07-31 | 629 | 66d |
| 654 | 5.7.1 | Installation guide | 22d | 2007-07-02 | 2007-07-31 |  | 66d |
| 655 | 5.7.2 | Administration guide | 22d | 2007-07-02 | 2007-07-31 |  | 66d |
| 656 | 5.7.3 | Release notes | 22d | 2007-07-02 | 2007-07-31 |  | 66d |
| 657 | 5.7.4 | Adopter summary of C3PR | 22d | 2007-07-02 | 2007-07-31 |  | 66d |
| 658 | 5.8 | **Support** | 22d | 2007-07-02 | 2007-07-31 | 629 | 66d |
| 659 | 5.8.1 | Adopter support | 22d | 2007-07-02 | 2007-07-31 |  | 66d |
| 660 | 5.8.2 | Bug fixing | 22d | 2007-07-02 | 2007-07-31 |  | 66d |
| 661 | 5.9 | **Touchpoints** | 22d | 2007-07-02 | 2007-07-31 | 629 | 66d |
| 662 | 5.9.1 | Adopter review of deliverables | 22d | 2007-07-02 | 2007-07-31 |  | 66d |
| 663 | 5.9.2 | Adopter deployment of previous iteration codebase | 22d | 2007-07-02 | 2007-07-31 |  | 66d |
| 664 | 5.9.3 | Begin semantic integration with the caDSR and EVS | 22d | 2007-07-02 | 2007-07-31 |  | 66d |
| 665 | 5.9.4 | Begin BRIDG review | 22d | 2007-07-02 | 2007-07-31 | 629 | 66d |
| 666 | 5.10 | **Deliverables** | 22d | 2007-07-02 | 2007-07-31 | 629 | 66d |
| 667 | 5.10.1 | Risk matrix 1.3.x | 22d | 2007-07-02 | 2007-07-31 |  | 66d |
| 668 | 5.10.2 | Monthly report and risk matrix 1.4.x | 22d | 2007-07-02 | 2007-07-31 |  | 66d |
| 669 | 5.10.3 | Use case document (3.1.x) | 22d | 2007-07-02 | 2007-07-31 |  | 66d |
| 670 | 5.10.4 | Requirements document (3.2.x) | 22d | 2007-07-02 | 2007-07-31 |  | 66d |
| 671 | 5.10.5 | UML (3.3.x) | 22d | 2007-07-02 | 2007-07-31 |  | 66d |
| 672 | 5.10.6 | Design document (3.4.x) | 22d | 2007-07-02 | 2007-07-31 |  | 66d |
| 673 | 5.10.7 | Codebase (3.5.x) | 22d | 2007-07-02 | 2007-07-31 |  | 66d |
| 674 | 5.10.8 | Test plan (3.6.x, 5.4.x) | 22d | 2007-07-02 | 2007-07-31 |  | 66d |
| 675 | 5.10.9 | Test report (3.8.x) | 22d | 2007-07-02 | 2007-07-31 |  | 66d |
| 676 | 5.10.10 | Adopter test plan (5.5.x) | 22d | 2007-07-02 | 2007-07-31 |  | 66d |
| 677 | 5.10.11 | Adopter test report (5.6.x) | 22d | 2007-07-02 | 2007-07-31 |  | 66d |
| 678 | 5.10.12 | Installation guide (3.10.x) | 22d | 2007-07-02 | 2007-07-31 |  | 66d |
| 679 | 5.10.13 | Administration guide (3.13.x) | 22d | 2007-07-02 | 2007-07-31 |  | 66d |
| 680 | 5.10.14 | Release notes (3.14.x) | 22d | 2007-07-02 | 2007-07-31 |  | 66d |
| 681 | 5.10.15 | Adopter summary of C3PR (5.1.x) | 22d | 2007-07-02 | 2007-07-31 |  | 66d |

| ID | WBS | Task | Type | Duration | Start | Finish | Predecessors | Total slack | Free slack | Constraint |
| --- | --- | --- | --- | --- | --- | --- | --- | --- | --- | --- |
| 682 | 6 | **Iteration 6 (randomization, reporting, legacy systems, semantic integration, BRIDG)** |  | 23d | 2007-08-01 | 2007-08-31 |  | 43d |  |  |
| 683 | 6.1 | Iteration start | milestone | 0d | 2007-08-01 | 2007-08-01 |  | 43d | 0d | start no earlier than 2007-08-01 |
| 684 | 6.2 | **Project management** |  | 23d | 2007-08-01 | 2007-08-31 | 683 | 43d |  |  |
| 685 | 6.2.1 | Update project plan |  | 23d | 2007-08-01 | 2007-08-31 |  | 43d |  |  |
| 686 | 6.2.2 | Update risk matrix |  | 23d | 2007-08-01 | 2007-08-31 |  | 43d |  |  |
| 687 | 6.2.3 | Monthly report |  | 23d | 2007-08-01 | 2007-08-31 |  | 43d |  |  |
| 688 | 6.3 | **Requirements and use cases** |  | 23d | 2007-08-01 | 2007-08-31 | 683 | 43d |  |  |
| 689 | 6.3.1 | Create level 1 use cases and requirements |  | 23d | 2007-08-01 | 2007-08-31 |  | 43d |  |  |
| 690 | 6.3.2 | Update use case document |  | 23d | 2007-08-01 | 2007-08-31 |  | 43d |  |  |
| 691 | 6.3.3 | Update requirements document |  | 23d | 2007-08-01 | 2007-08-31 |  | 43d |  |  |
| 692 | 6.4 | **Analysis and Design** |  | 23d | 2007-08-01 | 2007-08-31 | 683 | 43d |  |  |
| 693 | 6.4.1 | Perform level 1 design |  | 23d | 2007-08-01 | 2007-08-31 |  | 43d |  |  |
| 694 | 6.4.2 | Modeling |  | 23d | 2007-08-01 | 2007-08-31 |  | 43d |  |  |
| 695 | 6.4.3 | Systems design |  | 23d | 2007-08-01 | 2007-08-31 |  | 43d |  |  |
| 696 | 6.5 | **Implementation** |  | 23d | 2007-08-01 | 2007-08-31 | 683 | 43d |  |  |
| 697 | 6.5.1 | **Randomization** |  | 23d | 2007-08-01 | 2007-08-31 |  | 43d |  |  |
| 698 | 6.5.1.1 | Randomization call-out |  | 23d | 2007-08-01 | 2007-08-31 |  | 43d |  |  |
| 699 | 6.5.2 | **Reporting** |  | 23d | 2007-08-01 | 2007-08-31 |  | 43d |  |  |
| 700 | 6.5.2.1 | Finalize reporting |  | 23d | 2007-08-01 | 2007-08-31 |  | 43d |  |  |
| 701 | 6.5.3 | **Legacy systems** |  | 23d | 2007-08-01 | 2007-08-31 |  | 43d |  |  |
| 702 | 6.5.3.1 | Finalize legacy systems |  | 23d | 2007-08-01 | 2007-08-31 |  | 43d |  |  |
| 703 | 6.6 | **Testing** |  | 23d | 2007-08-01 | 2007-08-31 | 683 | 43d |  |  |
| 704 | 6.6.1 | Developer testing |  | 23d | 2007-08-01 | 2007-08-31 |  | 43d |  |  |
| 705 | 6.6.2 | Adopter testing |  | 23d | 2007-08-01 | 2007-08-31 |  | 43d |  |  |

| ID | WBS | Task | Duration | Start | Finish | Predecessors | Total slack |
| --- | --- | --- | --- | --- | --- | --- | --- |
| 706 | 6.7 | **Documentation** | 23d | 2007-08-01 | 2007-08-31 | 683 | 43d |
| 707 | 6.7.1 | Installation guide | 23d | 2007-08-01 | 2007-08-31 |  | 43d |
| 708 | 6.7.2 | Administration guide | 23d | 2007-08-01 | 2007-08-31 |  | 43d |
| 709 | 6.7.3 | Release notes | 23d | 2007-08-01 | 2007-08-31 |  | 43d |
| 710 | 6.7.4 | Adopter summary of C3PR | 23d | 2007-08-01 | 2007-08-31 |  | 43d |
| 711 | 6.8 | **Support** | 23d | 2007-08-01 | 2007-08-31 | 683 | 43d |
| 712 | 6.8.1 | Adopter support | 23d | 2007-08-01 | 2007-08-31 |  | 43d |
| 713 | 6.8.2 | Bug fixing | 23d | 2007-08-01 | 2007-08-31 |  | 43d |
| 714 | 6.9 | **Touchpoints** | 23d | 2007-08-01 | 2007-08-31 | 683 | 43d |
| 715 | 6.9.1 | Adopter review of deliverables | 23d | 2007-08-01 | 2007-08-31 |  | 43d |
| 716 | 6.9.2 | Adopter deployment of previous iteration codebase | 23d | 2007-08-01 | 2007-08-31 |  | 43d |
| 717 | 6.9.3 | Complete semantic integration with the caDSR and EVS | 23d | 2007-08-01 | 2007-08-31 |  | 43d |
| 718 | 6.9.4 | Complete BRIDG review | 23d | 2007-08-01 | 2007-08-31 |  | 43d |
| 719 | 6.10 | **Deliverables** | 23d | 2007-08-01 | 2007-08-31 | 683 | 43d |
| 720 | 6.10.1 | Risk matrix 1.3.x | 23d | 2007-08-01 | 2007-08-31 |  | 43d |
| 721 | 6.10.2 | Monthly report and risk matrix 1.4.x | 23d | 2007-08-01 | 2007-08-31 |  | 43d |
| 722 | 6.10.3 | Use case document (3.1.x) | 23d | 2007-08-01 | 2007-08-31 |  | 43d |
| 723 | 6.10.4 | Requirements document (3.2.x) | 23d | 2007-08-01 | 2007-08-31 |  | 43d |
| 724 | 6.10.5 | UML (3.3.x) | 23d | 2007-08-01 | 2007-08-31 |  | 43d |
| 725 | 6.10.6 | Design document (3.4.x) | 23d | 2007-08-01 | 2007-08-31 |  | 43d |
| 726 | 6.10.7 | Codebase (3.5.x) | 23d | 2007-08-01 | 2007-08-31 |  | 43d |
| 727 | 6.10.8 | Test plan (3.6.x, 5.4.x) | 23d | 2007-08-01 | 2007-08-31 |  | 43d |
| 728 | 6.10.9 | Test report (3.8.x) | 23d | 2007-08-01 | 2007-08-31 |  | 43d |
| 729 | 6.10.10 | Adopter test plan (5.5.x) | 23d | 2007-08-01 | 2007-08-31 |  | 43d |
| 730 | 6.10.11 | Adopter test report (5.6.x) | 23d | 2007-08-01 | 2007-08-31 |  | 43d |
| 731 | 6.10.12 | Installation guide (3.10.x) | 23d | 2007-08-01 | 2007-08-31 |  | 43d |
| 732 | 6.10.13 | Administration guide (3.13.x) | 23d | 2007-08-01 | 2007-08-31 |  | 43d |
| 733 | 6.10.14 | Release notes (3.14.x) | 23d | 2007-08-01 | 2007-08-31 |  | 43d |
| 734 | 6.10.15 | Adopter summary of C3PR (5.1.x) | 23d | 2007-08-01 | 2007-08-31 |  | 43d |

| ID | WBS | Task | Type | Duration | Start | Finish | Predecessors | Total slack | Free slack | Constraint |
| --- | --- | --- | --- | --- | --- | --- | --- | --- | --- | --- |
| 735 | 7 | **Iteration 7 (installer, silver review)** |  | 20d | 2007-09-03 | 2007-09-28 |  | 23d |  |  |
| 736 | 7.1 | Iteration start | milestone | 0d | 2007-09-03 | 2007-09-03 |  | 23d | 0d | start no earlier than 2007-09-03 |
| 737 | 7.2 | **Project management** |  | 20d | 2007-09-03 | 2007-09-28 | 736 | 23d |  |  |
| 738 | 7.2.1 | Update project plan |  | 20d | 2007-09-03 | 2007-09-28 |  | 23d |  |  |
| 739 | 7.2.2 | Update risk matrix |  | 20d | 2007-09-03 | 2007-09-28 |  | 23d |  |  |
| 740 | 7.2.3 | Monthly report |  | 20d | 2007-09-03 | 2007-09-28 |  | 23d |  |  |
| 741 | 7.3 | **Requirements and use cases** |  | 20d | 2007-09-03 | 2007-09-28 | 736 | 23d |  |  |
| 742 | 7.3.1 | Create level 1 use cases and requirements |  | 20d | 2007-09-03 | 2007-09-28 |  | 23d |  |  |
| 743 | 7.3.2 | Update use case document |  | 20d | 2007-09-03 | 2007-09-28 |  | 23d |  |  |
| 744 | 7.3.3 | Update requirements document |  | 20d | 2007-09-03 | 2007-09-28 |  | 23d |  |  |
| 745 | 7.4 | **Analysis and Design** |  | 20d | 2007-09-03 | 2007-09-28 | 736 | 23d |  |  |
| 746 | 7.4.1 | Perform level 1 design |  | 20d | 2007-09-03 | 2007-09-28 |  | 23d |  |  |
| 747 | 7.4.2 | Modeling |  | 20d | 2007-09-03 | 2007-09-28 |  | 23d |  |  |
| 748 | 7.4.3 | Systems design |  | 20d | 2007-09-03 | 2007-09-28 |  | 23d |  |  |
| 749 | 7.5 | Implementation |  | 20d | 2007-09-03 | 2007-09-28 | 736 | 23d |  |  |
| 750 | 7.6 | **Testing** |  | 20d | 2007-09-03 | 2007-09-28 | 736 | 23d |  |  |
| 751 | 7.6.1 | Developer testing |  | 20d | 2007-09-03 | 2007-09-28 |  | 23d |  |  |
| 752 | 7.6.2 | Adopter testing |  | 20d | 2007-09-03 | 2007-09-28 |  | 23d |  |  |
| 753 | 7.7 | **Documentation** |  | 20d | 2007-09-03 | 2007-09-28 | 736 | 23d |  |  |
| 754 | 7.7.1 | Installation guide |  | 20d | 2007-09-03 | 2007-09-28 |  | 23d |  |  |
| 755 | 7.7.2 | Administration guide |  | 20d | 2007-09-03 | 2007-09-28 |  | 23d |  |  |
| 756 | 7.7.3 | Release notes |  | 20d | 2007-09-03 | 2007-09-28 |  | 23d |  |  |
| 757 | 7.7.4 | Adopter summary of C3PR |  | 20d | 2007-09-03 | 2007-09-28 |  | 23d |  |  |
| 758 | 7.8 | **Support** |  | 20d | 2007-09-03 | 2007-09-28 | 736 | 23d |  |  |
| 759 | 7.8.1 | Adopter support |  | 20d | 2007-09-03 | 2007-09-28 |  | 23d |  |  |
| 760 | 7.8.2 | Bug fixing |  | 20d | 2007-09-03 | 2007-09-28 |  | 23d |  |  |

| ID | WBS | Task | Type | Duration | Start | Finish | Predecessors | Total slack | Constraint |
| --- | --- | --- | --- | --- | --- | --- | --- | --- | --- |
| 761 | 7.9 | **Touchpoints** |  | 20d | 2007-09-03 | 2007-09-28 | 736 | 23d |  |
| 762 | 7.9.1 | Adopter review of deliverables |  | 20d | 2007-09-03 | 2007-09-28 |  | 23d |  |
| 763 | 7.9.2 | Adopter deployment of previous iteration codebase |  | 20d | 2007-09-03 | 2007-09-28 |  | 23d |  |
| 764 | 7.9.3 | Begin silver review |  | 20d | 2007-09-03 | 2007-09-28 |  | 23d |  |
| 765 | 7.10 | **Deliverables** |  | 20d | 2007-09-03 | 2007-09-28 | 736 | 23d |  |
| 766 | 7.10.1 | Risk matrix 1.3.x |  | 20d | 2007-09-03 | 2007-09-28 |  | 23d |  |
| 767 | 7.10.2 | Monthly report and risk matrix 1.4.x |  | 20d | 2007-09-03 | 2007-09-28 |  | 23d |  |
| 768 | 7.10.3 | Use case document (3.1.x) |  | 20d | 2007-09-03 | 2007-09-28 |  | 23d |  |
| 769 | 7.10.4 | Requirements document (3.2.x) |  | 20d | 2007-09-03 | 2007-09-28 |  | 23d |  |
| 770 | 7.10.5 | UML (3.3.x) |  | 20d | 2007-09-03 | 2007-09-28 |  | 23d |  |
| 771 | 7.10.6 | Design document (3.4.x) |  | 20d | 2007-09-03 | 2007-09-28 |  | 23d |  |
| 772 | 7.10.7 | Codebase (3.5.x) |  | 20d | 2007-09-03 | 2007-09-28 |  | 23d |  |
| 773 | 7.10.8 | Test plan (3.6.x, 5.4.x) |  | 20d | 2007-09-03 | 2007-09-28 |  | 23d |  |
| 774 | 7.10.9 | Test report (3.8.x) |  | 20d | 2007-09-03 | 2007-09-28 |  | 23d |  |
| 775 | 7.10.10 | Adopter test plan (5.5.x) |  | 20d | 2007-09-03 | 2007-09-28 |  | 23d |  |
| 776 | 7.10.11 | Adopter test report (5.6.x) |  | 20d | 2007-09-03 | 2007-09-28 |  | 23d |  |
| 777 | 7.10.12 | Installation guide (3.10.x) |  | 20d | 2007-09-03 | 2007-09-28 |  | 23d |  |
| 778 | 7.10.13 | Administration guide (3.13.x) |  | 20d | 2007-09-03 | 2007-09-28 |  | 23d |  |
| 779 | 7.10.14 | Release notes (3.14.x) |  | 20d | 2007-09-03 | 2007-09-28 |  | 23d |  |
| 780 | 7.10.15 | Adopter summary of C3PR (5.1.x) |  | 20d | 2007-09-03 | 2007-09-28 |  | 23d |  |
| 781 | 8 | **Iteration 8 (silver review)** |  | 23d | 2007-10-01 | 2007-10-31 |  | 0d |  |
| 782 | 8.1 | Iteration start | milestone | 0d | 2007-10-01 | 2007-10-01 |  | 0d | start no earlier than 2007-10-01 |
| 783 | 8.2 | **Project management** |  | 23d | 2007-10-01 | 2007-10-31 | 782 | 0d |  |
| 784 | 8.2.1 | Update project plan |  | 23d | 2007-10-01 | 2007-10-31 |  | 0d |  |
| 785 | 8.2.2 | Update risk matrix |  | 23d | 2007-10-01 | 2007-10-31 |  | 0d |  |
| 786 | 8.2.3 | Monthly report |  | 23d | 2007-10-01 | 2007-10-31 |  | 0d |  |

| ID | WBS | Task | Duration | Start | Finish | Predecessors | Total slack |
| --- | --- | --- | --- | --- | --- | --- | --- |
| 787 | 8.3 | **Requirements and use cases** | 23d | 2007-10-01 | 2007-10-31 | 782 | 0d |
| 788 | 8.3.1 | Create level 1 use cases and requirements | 23d | 2007-10-01 | 2007-10-31 |  | 0d |
| 789 | 8.3.2 | Update use case document | 23d | 2007-10-01 | 2007-10-31 |  | 0d |
| 790 | 8.3.3 | Update requirements document | 23d | 2007-10-01 | 2007-10-31 |  | 0d |
| 791 | 8.4 | **Analysis and Design** | 23d | 2007-10-01 | 2007-10-31 | 782 | 0d |
| 792 | 8.4.1 | Perform level 1 design | 23d | 2007-10-01 | 2007-10-31 |  | 0d |
| 793 | 8.4.2 | Modeling | 23d | 2007-10-01 | 2007-10-31 |  | 0d |
| 794 | 8.4.3 | Systems design | 23d | 2007-10-01 | 2007-10-31 |  | 0d |
| 795 | 8.5 | Implementation | 23d | 2007-10-01 | 2007-10-31 | 782 | 0d |
| 796 | 8.6 | **Testing** | 23d | 2007-10-01 | 2007-10-31 | 782 | 0d |
| 797 | 8.6.1 | Developer testing | 23d | 2007-10-01 | 2007-10-31 |  | 0d |
| 798 | 8.6.2 | Adopter testing | 23d | 2007-10-01 | 2007-10-31 |  | 0d |
| 799 | 8.7 | **Documentation** | 23d | 2007-10-01 | 2007-10-31 | 782 | 0d |
| 800 | 8.7.1 | Installation guide | 23d | 2007-10-01 | 2007-10-31 |  | 0d |
| 801 | 8.7.2 | Administration guide | 23d | 2007-10-01 | 2007-10-31 |  | 0d |
| 802 | 8.7.3 | Release notes | 23d | 2007-10-01 | 2007-10-31 |  | 0d |
| 803 | 8.7.4 | Adopter summary of C3PR | 23d | 2007-10-01 | 2007-10-31 |  | 0d |
| 804 | 8.8 | **Support** | 23d | 2007-10-01 | 2007-10-31 | 782 | 0d |
| 805 | 8.8.1 | Adopter support | 23d | 2007-10-01 | 2007-10-31 |  | 0d |
| 806 | 8.8.2 | Bug fixing | 23d | 2007-10-01 | 2007-10-31 |  | 0d |
| 807 | 8.9 | **Touchpoints** | 23d | 2007-10-01 | 2007-10-31 | 782 | 0d |
| 808 | 8.9.1 | Adopter review of deliverables | 23d | 2007-10-01 | 2007-10-31 |  | 0d |
| 809 | 8.9.2 | Adopter deployment of previous iteration codebase | 23d | 2007-10-01 | 2007-10-31 |  | 0d |
| 810 | 8.9.3 | Complete silver review | 23d | 2007-10-01 | 2007-10-31 |  | 0d |

| ID | WBS | Task | Duration | Start | Finish | Predecessors | Total slack |
| --- | --- | --- | --- | --- | --- | --- | --- |
| 811 | 8.10 | **Deliverables** | 23d | 2007-10-01 | 2007-10-31 | 782 | 0d |
| 812 | 8.10.1 | Risk matrix 1.3.x | 23d | 2007-10-01 | 2007-10-31 |  | 0d |
| 813 | 8.10.2 | Monthly report and risk matrix 1.4.x | 23d | 2007-10-01 | 2007-10-31 |  | 0d |
| 814 | 8.10.3 | Use case document (3.1.x) | 23d | 2007-10-01 | 2007-10-31 |  | 0d |
| 815 | 8.10.4 | Requirements document (3.2.x) | 23d | 2007-10-01 | 2007-10-31 |  | 0d |
| 816 | 8.10.5 | UML (3.3.x) | 23d | 2007-10-01 | 2007-10-31 |  | 0d |
| 817 | 8.10.6 | Design document (3.4.x) | 23d | 2007-10-01 | 2007-10-31 |  | 0d |
| 818 | 8.10.7 | Codebase (3.5.x) | 23d | 2007-10-01 | 2007-10-31 |  | 0d |
| 819 | 8.10.8 | Test plan (3.6.x, 5.4.x) | 23d | 2007-10-01 | 2007-10-31 |  | 0d |
| 820 | 8.10.9 | Test report (3.8.x) | 23d | 2007-10-01 | 2007-10-31 |  | 0d |
| 821 | 8.10.10 | Adopter test plan (5.5.x) | 23d | 2007-10-01 | 2007-10-31 |  | 0d |
| 822 | 8.10.11 | Adopter test report (5.6.x) | 23d | 2007-10-01 | 2007-10-31 |  | 0d |
| 823 | 8.10.12 | Installation guide (3.10.x) | 23d | 2007-10-01 | 2007-10-31 |  | 0d |
| 824 | 8.10.13 | Administration guide (3.13.x) | 23d | 2007-10-01 | 2007-10-31 |  | 0d |
| 825 | 8.10.14 | Release notes (3.14.x) | 23d | 2007-10-01 | 2007-10-31 |  | 0d |
| 826 | 8.10.15 | Adopter summary of C3PR (5.1.x) | 23d | 2007-10-01 | 2007-10-31 |  | 0d |
