# elaboration_project_plan

Schedule from MS Project, 2006-11-01 to 2007-02-28, A marks actual dates.
Duke University

## Calendars

- Standard: Mon-Fri 08:00-12:00, 13:00-17:00; Sat-Sun off.

## Schedule

| ID | WBS | Task | Duration | Start | Finish | Predecessors | Complete | Remaining | Total slack | Free slack |
| --- | --- | --- | --- | --- | --- | --- | --- | --- | --- | --- |
| 1 | 1 | **Iteration 1** | 22d | 2006-11-01 A | 2006-11-30 |  | 13% | 19.08d | 64d |  |
| 2 | 1.1 | **Project Management** | 22d | 2006-11-01 A | 2006-11-30 |  | 30% | 15.46d | 64d |  |
| 3 | 1.1.1 | Draft project plan (task 1.1) | 10d | 2006-11-01 A | 2006-11-14 A |  | 100% |  |  |  |
| 4 | 1.1.2 | Draft communication plan (task 1.2) | 13d | 2006-11-01 A | 2006-11-17 A |  | 100% |  |  |  |
| 5 | 1.1.3 | Draft risk matrix (task 1.4.1) | 10d | 2006-11-01 A | 2006-11-14 A |  | 100% |  |  |  |
| 6 | 1.1.4 | Update risk matrix (task 1.3.1) | 12d | 2006-11-15 | 2006-11-30 | 5 |  |  | 64d |  |
| 7 | 1.1.5 | Monthly report (task 1.3.1) | 22d | 2006-11-01 | 2006-11-30 |  |  |  | 64d |  |
| 8 | 1.1.6 | Adoption Collaboration Report (task 1.7) | 22d | 2006-11-01 | 2006-11-30 |  |  |  | 64d |  |
| 9 | 1.1.7 | Test plan document (task 2.6.1) | 22d | 2006-11-01 | 2006-11-30 |  |  |  | 64d |  |
| 10 | 1.2 | **Requirements** | 22d | 2006-11-01 A | 2006-11-30 |  | 23% | 17.05d | 64d |  |
| 11 | 1.2.1 | Draft meeting notes from face-to-face (task 1.5) | 18d | 2006-11-01 A | 2006-11-24 A |  | 100% |  |  |  |
| 12 | 1.2.2 | Refine vision and scope document (task 1.8) | 18d | 2006-11-01 | 2006-11-24 |  |  |  | 68d |  |
| 13 | 1.2.3 | Draft level 1 use cases (task 2.1.1) | 22d | 2006-11-01 | 2006-11-30 |  |  |  | 64d |  |
| 14 | 1.2.4 | SRS document (task 2.2.1) | 22d | 2006-11-01 | 2006-11-30 |  |  |  | 64d |  |
| 15 | 1.3 | **Analysis and Design** | 22d | 2006-11-01 A | 2006-11-30 |  | 18% | 18.1d | 64d |  |
| 16 | 1.3.1 | Design document (task 2.4.1) | 22d | 2006-11-01 | 2006-11-30 |  |  |  | 64d |  |
| 17 | 1.3.2 | UML diagrams (task 2.3.1) | 22d | 2006-11-01 | 2006-11-30 |  |  |  | 64d |  |
| 18 | 1.3.3 | **ESB** | 22d | 2006-11-01 A | 2006-11-30 A |  | 100% |  |  |  |
| 19 | 1.3.3.1 | Evalutate technologies by prototyping | 22d | 2006-11-01 A | 2006-11-30 A |  | 100% |  |  |  |
| 20 | 1.3.4 | **Grid service** | 7d | 2006-11-01 | 2006-11-09 |  |  |  | 64d |  |
| 21 | 1.3.4.1 | Evaluate caGrid 1.0 service infrastructure | 7d | 2006-11-01 | 2006-11-09 |  |  |  | 64d | 0d |
| 22 | 1.3.5 | **Database** | 7d | 2006-11-01 | 2006-11-09 |  |  |  | 79d |  |
| 23 | 1.3.5.1 | First draft of protocol database structure | 7d | 2006-11-01 | 2006-11-09 |  |  |  | 79d |  |
| 24 | 1.3.6 | **Domain model** | 22d | 2006-11-01 | 2006-11-30 |  |  |  | 64d |  |
| 25 | 1.3.6.1 | Create protocol model with harmonized with BRIDG | 11d | 2006-11-01 | 2006-11-15 |  |  |  | 64d | 0d |
| 26 | 1.3.6.2 | Create first draft of protocol model | 11d | 2006-11-16 | 2006-11-30 | 25 |  |  | 64d |  |

| ID | WBS | Task | Duration | Start | Finish | Predecessors | Total slack | Free slack |
| --- | --- | --- | --- | --- | --- | --- | --- | --- |
| 27 | 1.3.7 | **Security** | 22d | 2006-11-01 | 2006-11-30 |  | 0d |  |
| 28 | 1.3.7.1 | Evaluate caGrid 1.0 security infrastructure | 22d | 2006-11-01 | 2006-11-30 |  | 0d |  |
| 29 | 1.4 | **Implementation** | 22d | 2006-11-01 | 2006-11-30 |  | 64d |  |
| 30 | 1.4.1 | **Web interface** | 22d | 2006-11-01 | 2006-11-30 |  | 64d |  |
| 31 | 1.4.1.1 | Migrate v1 code into codebase | 22d | 2006-11-01 | 2006-11-30 |  | 64d |  |
| 32 | 1.4.2 | **Enterprise Service Bus** | 22d | 2006-11-01 | 2006-11-30 |  | 64d |  |
| 33 | 1.4.2.1 | Setup initial project | 22d | 2006-11-01 | 2006-11-30 |  | 64d |  |
| 34 | 1.4.3 | **Grid service** | 15d | 2006-11-10 | 2006-11-30 |  | 64d |  |
| 35 | 1.4.3.1 | Create grid service skeleton | 15d | 2006-11-10 | 2006-11-30 | 21 | 64d |  |
| 36 | 1.4.4 | **Database** | 22d | 2006-11-01 | 2006-11-30 |  | 64d |  |
| 37 | 1.4.4.1 | Migrate v1 code into codebase | 22d | 2006-11-01 | 2006-11-30 |  | 64d |  |
| 38 | 1.4.4.2 | Implement protocol database structure | 22d | 2006-11-01 | 2006-11-30 |  | 64d |  |
| 39 | 1.4.5 | **Domain model** | 22d | 2006-11-01 | 2006-11-30 |  | 64d |  |
| 40 | 1.4.5.1 | Migrate v1 code into codebase | 22d | 2006-11-01 | 2006-11-30 |  | 64d |  |
| 41 | 1.4.5.2 | Implement protocol model | 15d | 2006-11-01 | 2006-11-21 |  | 64d | 0d |
| 42 | 1.4.5.3 | Create OR mapping for protocol model | 7d | 2006-11-22 | 2006-11-30 | 41 | 64d |  |
| 43 | 1.4.6 | **Business layer** | 22d | 2006-11-01 | 2006-11-30 |  | 64d |  |
| 44 | 1.4.6.1 | Migrate v1 code | 22d | 2006-11-01 | 2006-11-30 |  | 64d |  |
| 45 | 1.4.7 | Prototype code (task 2.5.1) | 22d | 2006-11-01 | 2006-11-30 |  | 64d |  |
| 46 | 1.5 | **Testing** | 22d | 2006-11-01 | 2006-11-30 |  | 64d |  |
| 47 | 1.5.1 | Implement unit tests | 22d | 2006-11-01 | 2006-11-30 |  | 64d |  |
| 48 | 1.5.2 | Test report (task 2.7.1) | 22d | 2006-11-01 | 2006-11-30 |  | 64d |  |
| 49 | 2 | **Iteration 2** | 21d | 2006-12-01 | 2006-12-29 | 27, 1 | 0d |  |
| 50 | 2.1 | **Project Management** | 21d | 2006-12-01 | 2006-12-29 |  | 43d |  |
| 51 | 2.1.1 | Update risk matrix (task 1.4.2) | 11d | 2006-12-01 | 2006-12-15 |  | 43d | 0d |
| 52 | 2.1.2 | Update risk matrix (task 1.3.2) | 10d | 2006-12-18 | 2006-12-29 | 51 | 43d |  |
| 53 | 2.1.3 | Monthly report (task 1.3.2) | 21d | 2006-12-01 | 2006-12-29 |  | 43d |  |
| 54 | 2.1.4 | Adoption Collaboration Report (task 1.7) | 21d | 2006-12-01 | 2006-12-29 |  | 43d |  |
| 55 | 2.1.5 | Test plan document (task 2.6.2) | 21d | 2006-12-01 | 2006-12-29 |  | 43d |  |

| ID | WBS | Task | Duration | Start | Finish | Predecessors | Total slack | Free slack |
| --- | --- | --- | --- | --- | --- | --- | --- | --- |
| 56 | 2.2 | **Requirements** | 21d | 2006-12-01 | 2006-12-29 |  | 43d |  |
| 57 | 2.2.1 | **Use case document** | 21d | 2006-12-01 | 2006-12-29 |  | 43d |  |
| 58 | 2.2.1.1 | Develop C3PR integration use cases (implementation) (task 2.1.2) | 21d | 2006-12-01 | 2006-12-29 |  | 43d |  |
| 59 | 2.2.1.2 | Develop Study Calendar integration use cases (implementation) (task 2.1.2) | 21d | 2006-12-01 | 2006-12-29 |  | 43d |  |
| 60 | 2.2.1.3 | Develop protocol management use cases (implementation) (task 2.1.2) | 21d | 2006-12-01 | 2006-12-29 |  | 43d |  |
| 61 | 2.2.2 | SRS document (task 2.2.2) | 21d | 2006-12-01 | 2006-12-29 |  | 43d |  |
| 62 | 2.3 | **Analysis and Design** | 21d | 2006-12-01 | 2006-12-29 |  | 43d |  |
| 63 | 2.3.1 | UML diagrams (task 2.3.2) | 21d | 2006-12-01 | 2006-12-29 |  | 43d |  |
| 64 | 2.3.2 | Design document (task 2.4.2) | 21d | 2006-12-01 | 2006-12-29 |  | 43d |  |
| 65 | 2.3.3 | **Doman model** | 21d | 2006-12-01 | 2006-12-29 |  | 43d |  |
| 66 | 2.3.3.1 | Harmonize participant model with BRIDG | 11d | 2006-12-01 | 2006-12-15 |  | 43d | 0d |
| 67 | 2.3.3.2 | Create participant model | 10d | 2006-12-18 | 2006-12-29 | 66 | 43d |  |
| 68 | 2.3.3.3 | Revise protocol model (including BRIDG harmonization) | 21d | 2006-12-01 | 2006-12-29 |  | 43d |  |
| 69 | 2.4 | **Implementation** | 21d | 2006-12-01 | 2006-12-29 |  | 0d |  |
| 70 | 2.4.1 | **Web interface** | 21d | 2006-12-01 | 2006-12-29 |  | 43d |  |
| 71 | 2.4.1.1 | First pass at dynamic interface | 5d | 2006-12-01 | 2006-12-07 |  | 43d | 0d |
| 72 | 2.4.1.2 | Add registration tab | 16d | 2006-12-08 | 2006-12-29 | 71 | 43d |  |
| 73 | 2.4.1.3 | Add skeleton of protocol management section | 16d | 2006-12-08 | 2006-12-29 | 71 | 43d |  |
| 74 | 2.4.1.4 | Point login module to Dorian (IdP service) | 21d | 2006-12-01 | 2006-12-29 |  | 43d |  |
| 75 | 2.4.2 | **Enterprise Service Bus** | 21d | 2006-12-01 | 2006-12-29 |  | 43d |  |
| 76 | 2.4.2.1 | Implement protocol creation message router | 5d | 2006-12-01 | 2006-12-07 |  | 43d | 0d |
| 77 | 2.4.2.2 | Implement protocol creation message handler for C3PR | 6d | 2006-12-08 | 2006-12-15 | 76 | 43d | 0d |
| 78 | 2.4.2.3 | Implement protocol creation message handler for Study Calendar | 6d | 2006-12-08 | 2006-12-15 | 76 | 43d | 0d |
| 79 | 2.4.2.4 | Implement participant creation message router | 5d | 2006-12-18 | 2006-12-22 | 78, 77 | 43d | 0d |
| 80 | 2.4.2.5 | Implement participant creation message handler for C3PR | 5d | 2006-12-25 | 2006-12-29 | 79 | 43d |  |
| 81 | 2.4.2.6 | Implement participant creation message handler for Study Calendar | 5d | 2006-12-25 | 2006-12-29 | 79 | 43d |  |

| ID | WBS | Task | Duration | Start | Finish | Predecessors | Total slack |
| --- | --- | --- | --- | --- | --- | --- | --- |
| 82 | 2.4.3 | **Grid service** | 21d | 2006-12-01 | 2006-12-29 |  | 43d |
| 83 | 2.4.3.1 | Implement protocol creation service | 21d | 2006-12-01 | 2006-12-29 |  | 43d |
| 84 | 2.4.3.2 | Implement participant creation service | 21d | 2006-12-01 | 2006-12-29 |  | 43d |
| 85 | 2.4.4 | **Database** | 21d | 2006-12-01 | 2006-12-29 |  | 43d |
| 86 | 2.4.4.1 | Update database with protocol changes | 21d | 2006-12-01 | 2006-12-29 |  | 43d |
| 87 | 2.4.4.2 | Update database with participant changes | 21d | 2006-12-01 | 2006-12-29 |  | 43d |
| 88 | 2.4.5 | **Domain model** | 21d | 2006-12-01 | 2006-12-29 |  | 43d |
| 89 | 2.4.5.1 | Implement participant model | 21d | 2006-12-01 | 2006-12-29 |  | 43d |
| 90 | 2.4.5.2 | Implement protocol model revisions | 21d | 2006-12-01 | 2006-12-29 |  | 43d |
| 91 | 2.4.6 | **Security** | 21d | 2006-12-01 | 2006-12-29 |  | 0d |
| 92 | 2.4.6.1 | Deploy Dorian | 16d | 2006-12-01 | 2006-12-22 |  | 0d |
| 93 | 2.4.6.2 | Setup Dorian users | 5d | 2006-12-25 | 2006-12-29 | 92 | 0d |
| 94 | 2.4.7 | **Business layer** | 21d | 2006-12-01 | 2006-12-29 |  | 43d |
| 95 | 2.4.7.1 | Implement protocol creation service | 21d | 2006-12-01 | 2006-12-29 |  | 43d |
| 96 | 2.4.7.2 | Implement participant creation service | 21d | 2006-12-01 | 2006-12-29 |  | 43d |
| 97 | 2.4.8 | Prototype code (task 2.5.2) | 21d | 2006-12-01 | 2006-12-29 |  | 43d |
| 98 | 2.5 | **Testing** | 21d | 2006-12-01 | 2006-12-29 |  | 43d |
| 99 | 2.5.1 | Create unit tests | 21d | 2006-12-01 | 2006-12-29 |  | 43d |
| 100 | 2.5.2 | Test report (task 2.7.2) | 21d | 2006-12-01 | 2006-12-29 |  | 43d |
| 101 | 3 | **Iteration 3** | 23d? | 2007-01-01 | 2007-01-31 | 91 | 0d |
| 102 | 3.1 | **Project Management** | 23d | 2007-01-01 | 2007-01-31 |  | 20d |
| 103 | 3.1.1 | Update risk matrix | 10d | 2007-01-01 | 2007-01-12 |  | 33d |
| 104 | 3.1.2 | Update risk matrix | 23d | 2007-01-01 | 2007-01-31 |  | 20d |
| 105 | 3.1.3 | Monthly report | 23d | 2007-01-01 | 2007-01-31 |  | 20d |
| 106 | 3.1.4 | Adoption Collaboration Report | 23d | 2007-01-01 | 2007-01-31 |  | 20d |
| 107 | 3.1.5 | Test plan document | 23d | 2007-01-01 | 2007-01-31 |  | 20d |

| ID | WBS | Task | Duration | Start | Finish | Predecessors | Total slack |
| --- | --- | --- | --- | --- | --- | --- | --- |
| 108 | 3.2 | **Requirements** | 23d | 2007-01-01 | 2007-01-31 |  | 20d |
| 109 | 3.2.1 | Use case document | 23d | 2007-01-01 | 2007-01-31 |  | 20d |
| 110 | 3.2.2 | SRS document | 23d | 2007-01-01 | 2007-01-31 |  | 20d |
| 111 | 3.3 | **Analysis and Design** | 23d? | 2007-01-01 | 2007-01-31 |  | 20d |
| 112 | 3.3.1 | UML diagrams | 23d | 2007-01-01 | 2007-01-31 |  | 20d |
| 113 | 3.3.2 | Design document | 23d | 2007-01-01 | 2007-01-31 |  | 20d |
| 114 | 3.3.3 | Draft architecture guide | 1d? | 2007-01-01 | 2007-01-01 |  | 42d |
| 115 | 3.4 | **Implementation** | 23d | 2007-01-01 | 2007-01-31 |  | 20d |
| 116 | 3.4.1 | Web interface | 23d | 2007-01-01 | 2007-01-31 |  | 20d |
| 117 | 3.4.2 | **Enterprise Service Bus** | 23d | 2007-01-01 | 2007-01-31 |  | 20d |
| 118 | 3.4.2.1 | Implement registration change message | 23d | 2007-01-01 | 2007-01-31 |  | 20d |
| 119 | 3.4.3 | Grid service | 23d | 2007-01-01 | 2007-01-31 |  | 20d |
| 120 | 3.4.4 | Database | 23d | 2007-01-01 | 2007-01-31 |  | 20d |
| 121 | 3.4.5 | Domain model | 23d | 2007-01-01 | 2007-01-31 |  | 20d |
| 122 | 3.4.6 | **Security** | 23d | 2007-01-01 | 2007-01-31 |  | 20d |
| 123 | 3.4.6.1 | Implement CSM authorization in grid service | 23d | 2007-01-01 | 2007-01-31 |  | 20d |
| 124 | 3.4.6.2 | Implement grid grouper | 23d | 2007-01-01 | 2007-01-31 |  | 20d |
| 125 | 3.5 | **Testing** | 23d | 2007-01-01 | 2007-01-31 |  | 0d |
| 126 | 3.5.1 | Test report | 23d | 2007-01-01 | 2007-01-31 |  | 0d |
| 127 | 4 | **Iteration 4** | 20d | 2007-02-01 | 2007-02-28 | 125, 101 | 0d |
| 128 | 4.1 | **Project Management** | 20d | 2007-02-01 | 2007-02-28 |  | 0d |
| 129 | 4.1.1 | Update risk matrix | 11d | 2007-02-01 | 2007-02-15 |  | 9d |
| 130 | 4.1.2 | Update risk matrix | 20d | 2007-02-01 | 2007-02-28 |  | 0d |
| 131 | 4.1.3 | Monthly report | 20d | 2007-02-01 | 2007-02-28 |  | 0d |
| 132 | 4.1.4 | Construction and transition phase plan | 20d | 2007-02-01 | 2007-02-28 |  | 0d |
| 133 | 4.1.5 | Adoption Collaboration Report | 20d | 2007-02-01 | 2007-02-28 |  | 0d |
| 134 | 4.1.6 | Test plan document | 20d | 2007-02-01 | 2007-02-28 |  | 0d |

| ID | WBS | Task | Duration | Start | Finish | Total slack |
| --- | --- | --- | --- | --- | --- | --- |
| 135 | 4.2 | **Requirements** | 20d | 2007-02-01 | 2007-02-28 | 0d |
| 136 | 4.2.1 | Use case document | 20d | 2007-02-01 | 2007-02-28 | 0d |
| 137 | 4.2.2 | SRS document | 20d | 2007-02-01 | 2007-02-28 | 0d |
| 138 | 4.3 | **Analysis and Design** | 20d | 2007-02-01 | 2007-02-28 | 0d |
| 139 | 4.3.1 | UML diagrams | 20d | 2007-02-01 | 2007-02-28 | 0d |
| 140 | 4.3.2 | Design document | 20d | 2007-02-01 | 2007-02-28 | 0d |
| 141 | 4.3.3 | Final architecture guide | 20d | 2007-02-01 | 2007-02-28 | 0d |
| 142 | 4.3.4 | Lessons learned | 20d | 2007-02-01 | 2007-02-28 | 0d |
| 143 | 4.4 | **Implementation** | 20d | 2007-02-01 | 2007-02-28 | 0d |
| 144 | 4.4.1 | Prototype code | 20d | 2007-02-01 | 2007-02-28 | 0d |
| 145 | 4.5 | **Testing** | 20d | 2007-02-01 | 2007-02-28 | 0d |
| 146 | 4.5.1 | Test report | 20d | 2007-02-01 | 2007-02-28 | 0d |
